# PROGRAMACION MODELO TUNERA (RUTA CRITICA)

Schedule from MS Project XML, 2024-07-05 to 2024-10-07, status date 2024-07-05, costs in $.

## Calendars

- Estándar: Mon-Fri 08:00-12:00, 13:00-17:00; Sat 08:00-12:30; Sun off. Exceptions (off unless hours are given): 2024-09-16 (Lunes 16 de septiembre por el aniversario de la Independencia), 2024-10-01 (Martes 1 de octubre por la transición del Poder Ejecutivo).

## Resources

| Resource | Unit | Rate |
| --- | --- | --- |
| Peón |  | 79.78 |
| Ayudante general |  | 85.88 |
| Ayudante montador y soldador |  | 84.67 |
| Of Pintor |  | 128.44 |
| Cabo de oficios |  | 141.73 |
| Of Albañil |  | 130.86 |
| Of Electricista |  | 140.53 |
| Of Plomero |  | 140.53 |
| Carpintero obra negra |  | 138.11 |
| Yesero |  | 128.44 |
| Tablaroquero |  | 131.83 |
| Colocador |  | 128.44 |
| Ebanista |  | 135.16 |
| Of Herrero |  | 131.23 |
| Of Fierrero |  | 134.89 |
| Soldador calificado |  | 152.61 |
| Oficial de instalaciones de gas LP |  | 134 |
| Ayudante electricista |  | 89.01 |
| Ayudante albañil |  | 89.01 |
| Ayudante plomero |  | 87.08 |
| Ayudante albañil |  | 87.08 |
| Ayudante tablaroquero |  | 84.67 |
| Ayudante de instalaciones de gas |  | 80.85 |
| Of Colador |  | 130.96 |
| Cuadrilla No 4 (1 Fierrero + 1 Ayudante general) |  | 234.73 |
| Cuadrilla No 5 (1 Albañíl + 1 Ayudante general ) |  | 230.91 |
| Cuadrilla No 27 (1 Albañil + 5 Peones) |  | 536.86 |
| Cuadrilla No 10 (1 Of Plomero + 1 Ayudante plomero) |  | 241.78 |
| Cuadrilla No 9 (1 Of Electricista + 1 Ayudante eléctrico) |  | 243.7 |
| Cuadrilla No 3 (1 Of Carpintero + 1 Ayudante general) |  | 238.16 |
| Cinta aislante Temflex 10600 mca 3M rollo 19mm x 18 m | rollo | 46.9 |
| Cable THW watts Marca Viakon calibre 12 | rollo | 1133 |
| Placa comercial A36 espesor de 6.4 x 76.2 mm (½" x 3') | kg | 17.54 |
| Soldadura eléctrica electrodo 6013-3 mm de 1/8" verde Infra | kg | 124 |
| Soldadura eléctrica electrodo 7018-3 mm de 1/8" | kg | 54.28 |
| Perfil CF formado en frio 4" x 2" x cal 14 (102 x 51 x 14) peso 3.34 kg/ml | kg | 32.45 |
| Varilla corrugada acero de refuerzo del # 3 | kg | 32.5 |
| Varilla corrugada acero de refuerzo del # 4 | kg | 32.5 |
| Varilla corrugada acero de refuerzo del # 5 | kg | 32.98 |
| Alambre recocido calibre 18 | kg | 30.78 |
| Armex 12 x 20-4 | ml | 43.2 |
| Alambre recocido del número 10. | kg | 23.04 |
| Aceite quemado | litro | 8.33 |
| Clavo con cabeza de 1" | kg | 90 |
| Clavo con cabeza de 3 ½" | kg | 30 |
| Perfil CF formado en frio 102 x 51 x 14 mm | kg | 32.5 |
| Malla electrosoldada 6-6/10-10 | m² | 24.67 |
| Malla electrosoldada 6-6/8-8 | m² | 68.24 |
| Malla electrosoldada 6-6/6-6 | m² | 43.13 |
| Cemento gris normal | ton | 6500 |
| Yeso | ton | 3600 |
| Arena en camión de 6 m3. | ton | 368.9 |
| Grava de 3/4" (19 mm) en camión de 6 m3. | ton | 412.3 |
| Adhesivo blanco premier antideslizamiento | saco | 171.55 |
| Calhidra. | ton | 3900 |
| Agua potable | m³ | 190 |
| Taquete de plástico anclo de 7.9 x 40 mm. (5/16"). | pza | 0.23 |
| Bisagra 1-13/16″ x 3″ de lujo para muebles. Perno suelto con dos cabezas tipo gota. Medida: 76mm (Alto) x 46mm (Ancho) x 1mm (Espesor) marca PHILLIPS | pza | 26.12 |
| Boquilla sellador mca Interceramic color Bone saco 10 kg | saco | 163.79 |
| Bovedilla poliestireno 15 x 61 x 122 cm | pza | 163.79 |
| Bovedilla poliestireno 16 x 61 x 122 cm | pza | 184.07 |
| Caja octagonal 4" mca ITSA reforzada | pza | 25 |
| Tornillo 2.5 cm 6 x 1" (punta fina) para tablaroca paquete con 100 piezas | pqte | 119 |
| Tornillo z plano (punta broca) 8 x ½" paquete con 100 piezas | pqte | 189 |
| Tornillo para madera de 10 x 38 | pqte | 124.49 |
| Taquete de fibra de 12 x 38 en presentación de caja de 100 pzas | pqte | 25.72 |
| Alambre galvanizado calibre 18 | kg | 84 |
| Cinta cubrejuntas de papel de 5 x 75 m | pza | 105 |
| Centro de carga con tapa empotrar mca Square modelo QO116L125PG | pza | 7490 |
| Combo de cerradura de bola y chapa de seguridad con llave acero inoxidable | combo | 345 |
| Cerradura de gatillo modelo Napones satinada | combo | 699 |
| Conector cespol de 32 x 50 mm | pza | 9 |
| Cople cobre rosca int 19 mm mca Urrea | pza | 56.05 |
| Cople rosca ext 13 mm mca Urrea | pza | 25.14 |
| Cople cobre rosca ext 19 mm mca Urrea | pza | 47.56 |
| Cople cobre a cobre 19 mm mca Nacobre | pza | 11.37 |
| Reducción bushing cobre 32 x 19 mm marca Urrea | pza | 142.13 |
| Llave angular vac-13c marca Urrea | pza | 32.45 |
| Manguera flexible lavabo 40 cm | pza | 63 |
| Lubricante para anger de PVC contenido bote de 500 grs marca Tubos flexibles | pza | 105.54 |
| Cemento PVC bote 460 gr. Tubos flex | pza | 191.28 |
| Soldadura 50 x 50 Omega 450 gr | pza | 389 |
| Soldadura 95x5 mca Omega | pza | 399 |
| Tinaco mca Rotoplas | pza | 3699 |
| Clavo de 2 ½" | kg | 30.01 |
| Armex 15x15-4 | tramo | 247.68 |
| Armex 15 x 20-4 | ml | 43.2 |
| Brida flexible corta PB-200marca Coflex | pza | 116 |
| Diesel no incluye IVA ni IEPYS | litro | 24.02 |
| Impermeabilizante acrílico TOP® Secado Rápido 10 años mca Comex 19 litros | cub | 3516 |
| Limpiador PVC y CPVC primer morado 473 ml mca Oatey | pza | 102.54 |
| Concreto premezclado no bombeable fc=200 kg/cm² normal clase I TMA 20 mm | m³ | 2370 |
| Concreto premezclado bombeable f'c=200 kg/cm² normal clase I TMA 20 mm revenimiento hasta 14 3.5 cm | m³ | 2354 |
| RHEOFINISH® 255 (19 litros x cubeta) | cub | 1650.68 |
| Llave mezcladora monomando para lavabo modelo 4420 mca Dica | pza | 659.1 |
| Aislacustic M65 R 13 medidas de 8.9 x 61 x 244 cm mca Owens Corning incluye 12 piezas. | paq | 2319 |
| Compuerta roscable de 13 mm marca Urrea | pza | 120 |
| Toallero barra modelo 105 cromo marca HELVEX | jgo | 1150.34 |
| Jabonera lavabo modelo 108 cromo marca HELVEX. | jgo | 566.9 |
| Porta papel tubo anti robo modelo 115 mca Helvex | pza | 1078.97 |
| Regadera optima con brazo y chapetón modelo H200 mca Helvex | jgo | 738.1 |
| Acero de refuerzo no. 2 (¼") fyp = 6000 kg/cm² | kg | 22.3 |
| Segueta diente fino bimetalica marca Hercort | pza | 24.5 |
| Caja chalupa profunda 2x4" galvanizada reforzada | pza | 11.5 |
| Piso cerámico modelo Agape mca Interceramic formato 60 x 60 cm color balnco | m² | 240.51 |
| Azulejo modelo Alhena blanco mca Interceramic formato 31 x 61 cm | m² | 240.51 |
| Antiderrapante mod Valparaiso formato 20 x 20 cm mca Interceramic. | m² | 206.03 |
| Válvula de Alivio (relevo hidrostático) 3/4" para tanque estacionario gas Lp marca IUSA modelo IUSASEG019 presión de desfogue 250 PSI Conexión 3/4" NPT | pza | 459 |
| Asiento c/tapa alargado standard antibanterial blanco mca Kuroda | pza | 380.69 |
| Fuente Vienna 4 blanco mca Corona | pza | 709.41 |
| Pedestal modelo Vienna blanco mca Corona | pza | 472.94 |
| Tanque Austral de palanca 3.8 litros blanco mca Kuroda | pza | 943.97 |
| Taza Austral alargada compacta blanco mca Kuroda | pza | 1108.97 |
| Contacto duplex con placa blanco mca Leviton cuenta con una capacidad de 15 amperes 125 volts y 60 Hertz de potencia | pza | 66 |
| Contacto duplex polarizado GFCI falla a tierra con placa blanco mca Leviton NEMA 5-20R cuenta con una capacidad de 15 amperes 125 volts y 60 Hertz de potencia | pza | 299 |
| Interruptor sencillo mca Leviton color blanco 120/277 volt 15 A Mod 5601 linea Decora incluye: placa decorativa color blanco modelo R52-80401-W | pza | 92 |
| Interruptor doble mca Leviton color blanco 120/277 volts 15 A Mod 5601-2E linea Decora; incluye: placa decorativa color blanco modelo R52-80401-W | pza | 1147 |
| Interruptor 3 vias mca Leviton color blanco 120/277 volts 15 A Mod 5693-2W linea Decora incluye: placa decorativa color blanco modelo R52-80401-W | pza | 264 |
| Llave con rosca p/manguera mca Rugo sin pulir cierre compresión 13mm conexión macho | pza | 52.95 |
| Tuino 1" | pt | 2.88 |
| Barrote de madera 2 x 4 x 8 | pt | 20 |
| Barrote de madera 3 x 3 x 8 | pt | 33 |
| Barrote de madera 4 x 4 x 8 | pt | 46.63 |
| Duela de madera 1 x 4 x 8' | pt | 10.65 |
| Madera 1½" x 2" x 8 | pt | 8.33 |
| Tornillo para madera #10 x 1½" en paquete de 144 piezas | pza | 0.62 |
| Taquete de plástico 3/8" | pza | 0.99 |
| Taquete ancla arpón de ¼" X 2¼" | pza | 7.2 |
| Clavo para concreto de 2 ½" | kg | 70 |
| Cerradura manija recta sin llave satinada | pza | 260 |
| Marco metalico universal chocolate 90 cm | jgo | 499 |
| Válvula doble check para liquido de 32 mm marca Rego UL | pza | 502.96 |
| Válvula de globo 3/4" (19mm) para liquido (100 psi) WOG neopreno soldable bronce marca Urrea | pza | 279.19 |
| Tablaroca-sheetrock normal de 2.44 m de largo x 1.22 m de ancho x 9.6 mm. espesor de la línea USG. | pza | 173 |
| Redimix compuesto multiusos en cubeta de 28 kg de la línea de USG | cub | 485 |
| Cable THW-LS 90°C 600v calibre 8 AWG marca Condulac | ml | 23.55 |
| Cable THW-LS/THW-LS 90°C 600v calibre 6 AWG marca Condulac | ml | 33.83 |
| Tubo de PVC hidraulico de cementar extremos lisos RD 13.5 con una presión de trabajo de 22.4 kg/cm2 de 3/4" (19 mm) de diámetro | ml | 15.14 |
| Codo PVC hidraulico de 90°x¾" (90°x19 mm) a cementar sistema inglés | pza | 4.15 |
| Codo de 90° PVC a cementar (hh) (90º x 50 mm) | pza | 6.96 |
| Codo de 90° cobre de 13 mm marca Nacobre | pza | 12.31 |
| Codo de 90° cobre de 19 mm marca Nacobre | pza | 29.32 |
| Tapón hembra de laton pata tubo de cobre ligero ½" (13 mm) de diámetro marca Nacobre | pza | 7.63 |
| Tee de cobre de (3/4") 19 mm marca Nacobre | pza | 49.22 |
| Codo de 90° cobre a rosca interior de 32 mm marca Nacobre | pza | 754 |
| Tubo sanitario de extremos lisos Anger de PVC de 50 mm de diámetro | tramo | 90.13 |
| Tubo PVC Ø=4" sanitario norma extremos lisos (100 mm) de diámetro | tramo | 215.85 |
| Tubo cobre tipo "K" de 3/4" (19 mm) marca nacobre | tramo | 2793.36 |
| Tubo de cobre tipo "L" de 19 mm. de diámetro tramo de 6.10 m. marca Nacobre. | tramo | 1258.29 |
| Curafest MC-320 blanco marca FESTER cubeta 19 litros | cub | 1268.4 |
| Cople CPVC-cts a cementar rosca código (Hh) de ½" (13mm) | pza | 7.15 |
| Adaptador macho de CPVC/cts cementar/rosca de ½" (13 mm) | pza | 3.49 |
| Tee CPVC/cts cementar (Hhh) de ½" (13mm) | pza | 10.08 |
| Tapón capa CPVC/cts cementar (Hh) de ½" (13 mm) | pza | 8.9 |
| Codo de 90° x ½" CPVC cts boc. Esp. a cementar (Hh) de ½" (13mm) | pza | 8.49 |
| Codo 90° x ½" CPVC cts cementar a rosca (Hh) con oreja | pza | 13.87 |
| Tubo CPVC/cts cementar Ø=½" (12.6mm) tramo de 3.05 m | tramo | 44.71 |
| Conector conduit R-0 ligero inserción rosca (Hm) de ½" | pza | 1.59 |
| Curva conduit 90°x ½" R-0 de PVC eléctrico ligero - In/Rc (Hm) | pza | 5.69 |
| Tubo conduit PVC liso eléctrico ligero de ½" (13mm) presentación en tramo de 3.00 m | ml | 6.33 |
| Cople - PVC sanitario - cementar (Hh) 2''. | pza | 7.13 |
| Cople PVC sanitario - cementar (Hh) 4''. | pza | 12.52 |
| Reducción bushing PVC sanitario a cementar (Hh) de 4 x 2" | pza | 23.75 |
| Codo 45ºx2" - PVC sanitario - cementar (Hh). | pza | 7.88 |
| Codo 45º - pvc sanitario - cementar (Hh) 3''. | pza | 15.16 |
| Codo 45º x 4"- PVC sanitario - cementar (Hh) | pza | 23.14 |
| Tee PVC sanitario cementar (Hhh) 4 x 4 x 4" | pza | 26.3 |
| Tee reducción central PVC sanitario cementar (Hhh) 4 x 4 x 2'' | pza | 28.94 |
| Yee PVC sanitario cementar (hhh) de 4 x 4 x 4" (100mm) | pza | 59.77 |
| Yee reducción PVC sanitario cementar (hhh) 4 x 4 x 2'' | pza | 33.63 |
| Codo de 90° x 4" PVC sanitario a cementar (Hhhh) salida lateral-trasera de 4 x 2" | pza | 46.33 |
| Codo 90° x4" PVC sanitario a cementar (Hhh) salida trasera de 4 x 2" | pza | 46.33 |
| Coladera PVC de plato salida lateral entrepiso anti goteras mca Duralon largo x ancho 21 cm x 12 cm; Ø=19 cm | pza | 380 |
| Tubo PVC sanitario extremos lisos anger de 3" (75mm) | ml | 28.62 |
| Codo 90° x4" PVC sanitario a cementar (Hh) | pza | 29.13 |
| Adaptador hembra CPVC ½" | pza | 5.53 |
| Adhesivo Polimor marca Niasa 20 kg | saco | 475.05 |
| Cemento CPVC FlowGuard® color blanco 946 ml | bote | 370 |
| Malla fibra de vidrio marca USG DUROCK 145gr de 0.97 x 45.7 m | rollo | 1403.89 |
| Perfil tubular cuadrado (PTR) de 51 x 51 mm (2" x 2") calibre 14 (2.91 kg/m) | kg | 32 |
| Perfil tubular cuadrado (PTR) de 51 x 51 mm (2" x 2") calibre 14 (2.91 kg/m) | kg | 32 |
| Conector para varilla cooperweld t/burndy | pza | 13.92 |
| Varilla tipo cooperweld 5/8" x 1.50 m | pza | 165.67 |
| Cantera blanco limón 40 x 40 cm | m² | 591.96 |
| Plástico negro No. 600 (6x1m=1 kg) | kg | 52.93 |
| Placa poliestireno blanco 122 x 61 x 2.5 cm | pza | 76.67 |
| Tapón hembra ½" (13mm) mca POLIMEX 157 | pza | 6.15 |
| Poste metálico 9.20 cm (3 5/8") calibre 26 de 3.05 m de longitud de la línea Perfirey | pza | 94 |
| Canal amarre 9.20 cm (3 5/8") calibre 26 de 3.05 m de longitud de la línea Perfirey | pza | 84 |
| Esquinero metálico calibre 26 de 3.05 m de longitud de la linea Perfirey | pza | 29 |
| Puerta metalica modelo Lisa color chocolate 90 x 206 cm para exteriores | pza | 1990 |
| Puerta fibra de vidrio modelo Lucero color chocolate 90 x 206 cm para exteriores | pza | 4390 |
| Puerta de madera modelo HDF Arena medida de 90 x 206 cm | pza | 665 |
| Puerta de madera modelo HDF Arena medida de 90 x 206 cm | pza | 670 |
| Pintura vinimex ultra (uv) 19 lt vinil acrílica especialmente diseñada para pigmentos resistentes a la decoloración y magnifica resistencia a la alcalinidad así como excelente inhibidor al crecimiento de hongos y algas | cub | 3519 |
| Sellador 5 x 1 reforzado reductor recomendado agua limpia en una proporción de 3 partes de agua por 1 de sellador en cubeta de 19 lt. | cub | 2265 |
| Primario anticorrosivo alquidalico base agua 1 lt color gris claro línea acqua 100 primer | litro | 399 |
| Estopa blanca | kg | 54.78 |
| Lija para agua 600 marca Fandeli | pza | 14.34 |
| Primario para metal color gris | litro | 193 |
| Block dala gris hueco 12 x 20 x 40 cm | pza | 12.09 |
| Block entero gris hueco 20 x 20 x 40 cm | pza | 21.5 |
| Block entero gris hueco 12 x 20 x 40 cm | pza | 15.74 |
| Portalámpara 4" de cerámica color blanco mca Igesa casquillo E27 | pza | 19 |
| Cespol para lavabo acabado cromo marca Dica | pza | 110 |
| Monomando para regadera Miura marca Helvex | pza | 2298 |
| Separador 5 mm mca Interceramic 100 pza | pza | 47.41 |
| Pasta para soldar 100 gr grupo Solver / S5 603 | pza | 113 |
| Interruptor derivado tipo QO termomagnético 1Px20 Amp marca Square D | pza | 194.62 |
| Placa ciega color blanco mca Leviton | pza | 11 |
| Tapon registro PVC Sanitario de 4" con tapa de bronce ajustable | pza | 410 |
| Cinta teflón PTFE premium PLASTITHREAD 3/4" (19mm )x13.20 m | carrete | 119.65 |
| Trampa para lavabo fregadero de 16 x 6.5 cm blanco | jgo | 45 |
| Cilindro de gas propano de 400 gr azul marca Truper | cilindro | 389 |
| Manguera flexible para w.c. de 35cm | pza | 44.67 |
| Pija para w.c | pza | 2.75 |
| Tubería poliflex naranja con guía de ½" para uso eléctrico presentación de rollo de 100 m marca Poliflex | rollo | 905.65 |
| Tubería poliflex naranja con guía de 1¼"" (32mm) para uso eléctrico rollo 50 m marca Poliflex. | rollo | 1949.88 |
| Stucco (plaster uinblock) marca Uniblock color blanco 40 kg | saco | 381 |
| Vigueta V11-30 mca Trabis | ml | 139.2 |
| Vigueta V11-40 mca Trabis | ml | 154.28 |
| Vigueta V16-50 mca Trabis | ml | 180.96 |
| Lavadero con pileta derecha con taquetes y tornillos incluidos mca Valsaplas color gris medidas 71 x 65 x 25 cm | pza | 1360 |
| Válvula check de columpio mca Rugo 79 13 mm (½'') | pza | 163 |
| Cemento PVC Weld-On® 704™ bote (946 ml) 1 quart | bote | 380 |
| Fumigación antitermita con producto Clorpirifos equivalente a Termidel |  |  |
| Herramienta menor |  |  |
| Andamio metálico a base tubular y hasta 4.0 m de altura. |  |  |
| Porcentaje de equipo de seguridad |  |  |
| Materiales menores limpieza |  |  |
| Fabricación de cimbra perimetral en cimentación a base de perfil CF formados en frio 4" x 2" x cal 14 (102 x 51 x 14) peso 3.34 kg/ml |  |  |
| Peon |  | 93.96 |
| Revolvedora para concreto marca Cipsa modelo R10 |  |  |
| Vibrador de gasolina marca Felsa modelo vibromax cap. 12000 VPM con manguera de 4.00 m y cabezal de por 38 mm ( 1½") con motor de gasolina de 4 HP |  |  |
| Vibrador de gasolina marca Felsa modelo vibromax cap. 12000 VPM con manguera de 4.00 m y cabezal de por 38 mm ( 1½") con moto |  |  |

## Schedule

| ID | WBS | Task | Type | Duration | Start | Finish | Predecessors | Total slack | Free slack | Constraint | Resources | Work | Cost |
| --- | --- | --- | --- | --- | --- | --- | --- | --- | --- | --- | --- | --- | --- |
| 1 | 1 | **LOSA DE CIMENTACIÓN** |  | 6.96d? | 2024-07-05 | 2024-07-15 |  |  |  | start no earlier than 2024-07-05 |  | 190.84h | 69,151.6 |
| 2 | 1.1 | Trazo y nivelación en terreno (plataforma) y zapata, por medios manuales |  | 0.02d | 2024-07-05 | 2024-07-05 |  | 38.52d | 0d |  | Calhidra. [0.1 ton]; Varilla corrugada acero de refuerzo del # 4 [0.1 kg]; Duela de madera 1 x 4 x 8' [1 pt]; Of Albañil; Ayudante general; Herramienta menor; Porcentaje de equipo de seguridad | 0.32h | 457.55 |
| 3 | 1.2 | Colocacion de cimbra perimetral en losa de cimentación y zapata |  | 0.3d | 2024-07-05 | 2024-07-06 | 2 | 38.52d | 0d | start no earlier than 2024-07-05 | Fabricación de cimbra perimetral en cimentación a base de perfil CF formados en frio 4" x 2" x cal 14 (102 x 51 x 14) peso 3.34 kg/ml; RHEOFINISH® 255 (19 litros x cubeta) [0.01 cub]; Of Albañil; Ayudante general; Herramienta menor; Porcentaje de equipo de seguridad | 4.8h | 1,322.69 |
| 4 | 1.3 | Excavación manual en plataforma y zapata compactado al 100% |  | 0.85d? | 2024-07-06 | 2024-07-08 | 3 | 38.52d | 0d |  | Ayudante general; Herramienta menor; Porcentaje de equipo de seguridad | 6.8h | 613.19 |
| 5 | 1.4 | Aplicación de Fumigación antitermita con producto Clorpirifos equivalente a Termidel (3 años) |  | 0.1d | 2024-07-08 | 2024-07-08 | 4 | 38.52d | 0d |  | Fumigación antitermita con producto Clorpirifos equivalente a Termidel |  | 1,069.89 |
| 6 | 1.5 | Plástico Polietileno de 200 micras en losa de cimentación |  | 0.44d | 2024-07-08 | 2024-07-09 | 5 | 38.52d | 0d |  | Plástico negro No. 600 (6x1m=1 kg) [0.27 kg]; Of Albañil; Ayudante general; Herramienta menor; Porcentaje de equipo de seguridad | 7.04h | 779.26 |
| 7 | 1.6 | Plomeria en cimentacion 01: trazo nivelacion y excavación para linea de aguas grises |  | 0.65d | 2024-07-09 | 2024-07-10 | 6 | 38.52d | 0d |  | Calhidra. [0.01 ton]; Varilla corrugada acero de refuerzo del # 4 [0.02 kg]; Duela de madera 1 x 4 x 8' [0.01 pt]; Of Plomero; Ayudante plomero; Herramienta menor; Porcentaje de equipo de seguridad; Arena en camión de 6 m3. [0.01 ton] | 10.2h | 1,269.49 |
| 8 | 1.7 | Plomeria en cimentacion 02: instalación de tuberia de PVC sanitaria |  | 0.81d | 2024-07-09 | 2024-07-10 | 7SS | 38.52d | 0d |  | Tubo PVC Ø=4" sanitario norma extremos lisos (100 mm) de diámetro [0.86 tramo]; Tubo sanitario de extremos lisos Anger de PVC de 50 mm de diámetro [0.46 tramo]; Codo de 90° x 4" PVC sanitario a cementar (Hhhh) salida lateral-trasera de 4 x 2" [1 pza]; Codo 90° x4" PVC sanitario a cementar (Hh) [2 pza]; Yee reducción PVC sanitario cementar (hhh) 4 x 4 x 2'' [3 pza]; Tee PVC sanitario cementar (Hhh) 4 x 4 x 4" [1 pza]; Cople PVC sanitario - cementar (Hh) 4''. [2 pza]; Codo de 90° PVC a cementar (hh) (90º x 50 mm) [6 pza]; Cople - PVC sanitario - cementar (Hh) 2''. [5 pza]; Cemento PVC Weld-On® 704™ bote (946 ml) 1 quart [0.49 bote]; Of Plomero; Ayudante plomero; Herramienta menor; Porcentaje de equipo de seguridad | 13h | 2,279.35 |
| 9 | 1.8 | Plomeria en cimentacion 03: instalación de tuberia de CPVC hidraúlica |  | 1.6d | 2024-07-09 | 2024-07-10 | 8SS | 38.52d | 0d |  | Tubo CPVC/cts cementar Ø=½" (12.6mm) tramo de 3.05 m [6.05 tramo]; Codo 90° x ½" CPVC cts cementar a rosca (Hh) con oreja [22 pza]; Cople CPVC-cts a cementar rosca código (Hh) de ½" (13mm) [4 pza]; Tee CPVC/cts cementar (Hhh) de ½" (13mm) [26 pza]; Tapón capa CPVC/cts cementar (Hh) de ½" (13 mm) [22 pza]; Adaptador hembra CPVC ½" [12 pza]; Tapón hembra ½" (13mm) mca POLIMEX 157 [12 pza]; Cemento CPVC FlowGuard® color blanco 946 ml [0.27 bote]; Limpiador PVC y CPVC primer morado 473 ml mca Oatey [0.27 pza]; Calhidra. [0.01 ton]; Varilla corrugada acero de refuerzo del # 4 [0.02 kg]; Duela de madera 1 x 4 x 8' [0.14 pt]; Of Plomero; Ayudante plomero; Herramienta menor; Porcentaje de equipo de seguridad | 25.6h | 4,480.32 |
| 10 | 1.9 | Plomeria en cimentacion 04: pruebas hidrostática y de hermeticidad en línea de drenaje e hidraulica |  | 0.25d | 2024-07-09 | 2024-07-10 | 9SS | 38.52d | 0d |  | Of Plomero; Ayudante plomero; Herramienta menor; Porcentaje de equipo de seguridad | 3.6h | 419.61 |
| 11 | 1.10 | Plomeria sanitaria en cimentacion 05: Relleno compactado manualmente en cepas |  | 0.06d | 2024-07-09 | 2024-07-10 | 10SS | 38.52d | 0d |  | Peon; Herramienta menor; Porcentaje de equipo de seguridad | 0.5h | 49.48 |
| 12 | 1.11 | Acero en cimentación y zapata 01: en contra trabes CT-1 y CT-2 |  | 1d | 2024-07-10 | 2024-07-11 | 11 | 38.52d | 0d |  | Varilla corrugada acero de refuerzo del # 3 [319.44 kg]; Alambre recocido calibre 18 [13.28 kg]; Armex 15 x 20-4 [31.76 ml]; Armex 15x15-4 [20.46 tramo]; Of Fierrero; Ayudante general; Herramienta menor; Porcentaje de equipo de seguridad | 16h | 19,080.28 |
| 13 | 1.12 | Acero en cimentación y zapata 02: acero vertical en el perimetro de losa de cimentación, áreas bajo ventana y contra trabes CT-2 |  | 1d | 2024-07-10 | 2024-07-11 | 12SS | 38.52d | 0d |  | Varilla corrugada acero de refuerzo del # 3 [152.61 kg]; Alambre recocido calibre 18 [8.98 kg]; Of Fierrero; Ayudante general; Herramienta menor; Porcentaje de equipo de seguridad | 16h | 7,089.39 |
| 14 | 1.13 | Acero en cimentación y zapata 03: acero en bajada de agua grises |  | 0.06d | 2024-07-10 | 2024-07-11 | 13SS | 38.52d | 0d |  | Armex 15 x 20-4 [5.63 ml]; Alambre recocido calibre 18 [0.13 kg]; Of Fierrero; Ayudante general; Herramienta menor; Porcentaje de equipo de seguridad | 0.98h | 360.39 |
| 15 | 1.14 | Electricidad en cimentación 01: poliducto 1¼" (32 mm) color naranja bajo firme de concreto hacia centro de carga según planos IE-01 |  | 1.5d | 2024-07-11 | 2024-07-12 | 14 | 42.14d | 0d |  | Tubería poliflex naranja con guía de ½" para uso eléctrico presentación de rollo de 100 m marca Poliflex [1 rollo]; Of Electricista; Ayudante electricista; Herramienta menor; Porcentaje de equipo de seguridad | 24h | 4,148.13 |
| 16 | 1.15 | Electricidad en cimentación 02: ramaleo para contactos y apagadores de poliducto ½" (13 mm) color naranja bajo firme de concreto según planos IE-01 |  | 0.38d | 2024-07-11 | 2024-07-12 | 14, 15FF | 42.14d | 0d |  | Tubería poliflex naranja con guía de 1¼"" (32mm) para uso eléctrico rollo 50 m marca Poliflex. [0.28 rollo]; Of Electricista; Ayudante electricista; Herramienta menor; Porcentaje de equipo de seguridad | 6h | 1,322.35 |
| 17 | 1.16 | Electricidad en cimentación 03: ramaleo para contactos y apagadores de poliducto ½" (13 mm) color naranja bajo firme de concreto según planos IE-02 |  | 1.38d | 2024-07-11 | 2024-07-12 | 14, 16FF | 42.14d |  |  | Tubería poliflex naranja con guía de ½" para uso eléctrico presentación de rollo de 100 m marca Poliflex [1 rollo]; Of Electricista; Ayudante electricista; Herramienta menor; Porcentaje de equipo de seguridad | 22h | 3,430.59 |
| 18 | 1.17 | Telecomunicaciones en cimentacion: ramaleo de poliducto ½" para TV, telefono, internet |  | 0.38d | 2024-07-11 | 2024-07-11 | 14 | 38.52d | 0d |  | Tubería poliflex naranja con guía de ½" para uso eléctrico presentación de rollo de 100 m marca Poliflex [0.27 rollo]; Of Electricista; Ayudante electricista; Herramienta menor; Porcentaje de equipo de seguridad | 6h | 961.75 |
| 19 | 1.18 | Colado en losa de cimentación y zapata con un f'c=200 kg/cm², TMA 19 mm, revenimiento de 10 ± 2.5 cm |  | 1.75d | 2024-07-11 | 2024-07-13 | 18 | 38.52d | 0d |  | Concreto premezclado bombeable f'c=200 kg/cm² normal clase I TMA 20 mm revenimiento hasta 14 3.5 cm [7.01 m³]; Curafest MC-320 blanco marca FESTER cubeta 19 litros [0.38 cub]; Of Albañil; Ayudante general [400%] | 28h | 20,017.89 |
| 20 | 1.19 | Fin de CIMENTACIÓN | milestone | 0d | 2024-07-13 | 2024-07-13 | 19 | 41.52d | 2.16d |  |  |  |  |
| 21 | 2 | **MUROS EN PLANTA BAJA** |  | 18.57d | 2024-07-17 | 2024-08-02 | 1, 61, 81, 95, 20 |  |  |  |  | 287.15h | 106,437.13 |
| 22 | 2.1 | Trazo y desplante de muros sobre losa de cimentación para muro de mampostería |  | 1.1d | 2024-07-17 | 2024-07-23 | 19FS+3d | 38.52d | 0d |  | Calhidra. [0.01 ton]; Varilla corrugada acero de refuerzo del # 4 [1.03 kg]; Duela de madera 1 x 4 x 8' [0.26 pt]; Block entero gris hueco 12 x 20 x 40 cm [136.59 pza]; Cemento gris normal [0.24 ton]; Arena en camión de 6 m3. [0.84 ton]; Agua potable [0.17 m³]; Of Albañil; Ayudante albañil; Herramienta menor; Porcentaje de equipo de seguridad | 17.66h | 6,450.52 |
| 23 | 2.2 | Muros y castillos K1, K2, K2A, K3, K4 en planta baja parcialidad 01: de block gris pesado 12x20x40 cm, asentado con mortero cemento arena 1:3 |  | 3.02d | 2024-07-23 | 2024-07-30 | 22 | 38.52d | 0d |  | Block entero gris hueco 12 x 20 x 40 cm [79.98 pza]; Cemento gris normal [0.35 ton]; Arena en camión de 6 m3. [0.83 ton]; Agua potable [0.28 m³]; Of Albañil; Ayudante albañil; Herramienta menor; Porcentaje de equipo de seguridad; Andamio metálico a base tubular y hasta 4.0 m de altura.; Grava de 3/4" (19 mm) en camión de 6 m3. [0.43 ton] | 45.74h | 9,477.46 |
| 24 | 2.3 | Plomeria sanitaria en muros 01: tubería PVC para linea de aguas grises varios Ø=2" y Ø=4" |  | 0.72d | 2024-07-23 | 2024-07-30 | 23SS | 38.52d | 0d |  | Tubo sanitario de extremos lisos Anger de PVC de 50 mm de diámetro [1.76 tramo]; Tubo PVC Ø=4" sanitario norma extremos lisos (100 mm) de diámetro [1.27 tramo]; Cemento PVC bote 460 gr. Tubos flex [0.1 pza]; Limpiador PVC y CPVC primer morado 473 ml mca Oatey [0.1 pza]; Codo 90° x4" PVC sanitario a cementar (Hh) [3 pza]; Cople PVC sanitario - cementar (Hh) 4''. [2 pza]; Codo de 90° PVC a cementar (hh) (90º x 50 mm) [4 pza]; Cemento PVC Weld-On® 704™ bote (946 ml) 1 quart [0.5 bote]; Of Plomero; Ayudante plomero; Herramienta menor; Porcentaje de equipo de seguridad | 10.37h | 2,036.94 |
| 25 | 2.4 | Plomeria hidraúlica en muros 01: sondeo de tubería CPVC (agua fria y agua caliente) para colocación de puntas |  | 0.9d | 2024-07-23 | 2024-07-30 | 23SS, 24FF | 38.52d | 0d |  | Tubo CPVC/cts cementar Ø=½" (12.6mm) tramo de 3.05 m [9.1 tramo]; Codo de 90° x ½" CPVC cts boc. Esp. a cementar (Hh) de ½" (13mm) [11 pza]; Tee CPVC/cts cementar (Hhh) de ½" (13mm) [13 pza]; Cople CPVC-cts a cementar rosca código (Hh) de ½" (13mm) [2 pza]; Tapón capa CPVC/cts cementar (Hh) de ½" (13 mm) [11 pza]; Adaptador macho de CPVC/cts cementar/rosca de ½" (13 mm) [6 pza]; Tapón hembra ½" (13mm) mca POLIMEX 157 [6 pza]; Cemento CPVC FlowGuard® color blanco 946 ml [0.5 bote]; Limpiador PVC y CPVC primer morado 473 ml mca Oatey [0.5 pza]; Cinta teflón PTFE premium PLASTITHREAD 3/4" (19mm )x13.20 m [1 carrete]; Of Plomero; Ayudante plomero; Herramienta menor; Porcentaje de equipo de seguridad | 13.03h | 2,761.91 |
| 26 | 2.5 | Electricidad en muros 01: poliducto 1¼" (32 mm) color naranja bajo firme de concreto hacia centro de carga según planos IE-01 |  | 0.33d | 2024-07-23 | 2024-07-30 | 23SS, 25FF | 38.52d | 0d |  | Tubería poliflex naranja con guía de 1¼"" (32mm) para uso eléctrico rollo 50 m marca Poliflex. [0.3 rollo]; Of Electricista; Ayudante electricista; Herramienta menor; Porcentaje de equipo de seguridad | 5.06h | 1,190.85 |
| 27 | 2.6 | Cadena bajo ventana a base de block dala 12x15x40 cm con refuerzo horizontal con Var #4 y ganchos en los extremos @ 2 hiladas; concreto hecho en obra con un f'c=150 kg/cm |  | 0.18d | 2024-07-24 | 2024-07-30 | 26FS-4d | 38.52d | 0d |  | Block dala gris hueco 12 x 20 x 40 cm [12 pza]; Cemento gris normal [0.07 ton]; Arena en camión de 6 m3. [0.03 ton]; Agua potable [0.03 m³]; Varilla corrugada acero de refuerzo del # 4 [4.22 kg]; Grava de 3/4" (19 mm) en camión de 6 m3. [0.01 ton]; Of Albañil [200%]; Ayudante albañil [200%]; Herramienta menor; Porcentaje de equipo de seguridad | 5.61h | 1,375.9 |
| 28 | 2.7 | Muros y castillos K1, K2, K2A, K3, K4, K5 en planta baja parcialidad 02: de block gris pesado 12x20x40 cm |  | 2.91d | 2024-07-30 | 2024-08-03 | 27 | 38.52d | 0d |  | Block entero gris hueco 12 x 20 x 40 cm [370.35 pza]; Cemento gris normal [0.78 ton]; Arena en camión de 6 m3. [1.51 ton]; Agua potable [0.63 m³]; Grava de 3/4" (19 mm) en camión de 6 m3. [1.27 ton]; Andamio metálico a base tubular y hasta 4.0 m de altura.; Of Albañil; Ayudante albañil; Herramienta menor; Porcentaje de equipo de seguridad; Revolvedora para concreto marca Cipsa modelo R10; Vibrador de gasolina marca Felsa modelo vibromax cap. 12000 VPM con manguera de 4.00 m y cabezal de por 38 mm ( 1½") con moto | 43.93h | 17,765.59 |
| 29 | 2.8 | Dintel corrido DIN-1 sobre puertas y ventanas a H=2.09 m sobre nivel de piso terminado a base de block dala 12x20x40 cm |  | 1.41d | 2024-08-01 | 2024-08-02 | 28FS-2d | 39.39d | 0d |  | Block dala gris hueco 12 x 20 x 40 cm [136.33 pza]; Varilla corrugada acero de refuerzo del # 4 [57.37 kg]; Alambre recocido calibre 18 [1.4 kg]; Cemento gris normal [0.38 ton]; Arena en camión de 6 m3. [0.66 ton]; Grava de 3/4" (19 mm) en camión de 6 m3. [0.65 ton]; Agua potable [0.31 m³]; Revolvedora para concreto marca Cipsa modelo R10; Vibrador de gasolina marca Felsa modelo vibromax cap. 12000 VPM con manguera de 4.00 m y cabezal de por 38 mm ( 1½") con moto; Andamio metálico a base tubular y hasta 4.0 m de altura.; Cuadrilla No 5 (1 Albañíl + 1 Ayudante general ); Cuadrilla No 4 (1 Fierrero + 1 Ayudante general); Cuadrilla No 27 (1 Albañil + 5 Peones) [0.56%]; Herramienta menor; Porcentaje de equipo de seguridad | 15.95h | 11,070.4 |
| 30 | 2.9 | Muros y castillos K1, K2, K2A, K3, K4, K5 en planta baja parcialidad 03: enrrase de block gris pesado 12x20x40 cm, asentado con mortero cemento arena 1:6 |  | 1.91d | 2024-08-02 | 2024-08-05 | 29 | 39.39d | 0d |  | Block entero gris hueco 12 x 20 x 40 cm [370.75 pza]; Cemento gris normal [0.35 ton]; Arena en camión de 6 m3. [0.82 ton]; Grava de 3/4" (19 mm) en camión de 6 m3. [0.43 ton]; Agua potable [0.28 m³]; Revolvedora para concreto marca Cipsa modelo R10; Vibrador de gasolina marca Felsa modelo vibromax cap. 12000 VPM con manguera de 4.00 m y cabezal de por 38 mm ( 1½") con moto; Cuadrilla No 5 (1 Albañíl + 1 Ayudante general ); Cuadrilla No 27 (1 Albañil + 5 Peones); Herramienta menor; Porcentaje de equipo de seguridad | 15.52h | 12,991.41 |
| 31 | 2.10 | Plomeria sanitaria en muros 02: tubería PVC para linea de aguas grises varios Ø=2" y Ø=4" |  | 5d | 2024-07-30 | 2024-08-05 | 28SS | 42.71d | 0d |  |  |  |  |
| 32 | 2.11 | Plomeria hidraúlica en muros 02: sondeo de tubería CPVC (agua fria y agua caliente) para colocación de puntas |  | 5d | 2024-07-30 | 2024-08-05 | 28SS, 31FF | 42.71d | 0d |  |  |  |  |
| 33 | 2.12 | Electricidad en muros 02: poliducto 1¼" (32 mm) color naranja bajo firme de concreto hacia centro de carga según planos IE-01 |  | 5d | 2024-07-30 | 2024-08-05 | 28SS, 32FF | 42.71d |  |  | Caja chalupa profunda 2x4" galvanizada reforzada [15 pza]; Cuadrilla No 9 (1 Of Electricista + 1 Ayudante eléctrico); Herramienta menor; Porcentaje de equipo de seguridad | 40h | 10,066.62 |
| 34 | 2.13 | Plomeria hidraúlica en muros 02: prueba hidrostática de hermeticidad en línea de agua fria y caliente |  | 0.28d | 2024-08-05 | 2024-08-06 | 30 | 41.39d |  |  | Cuadrilla No 10 (1 Of Plomero + 1 Ayudante plomero); Herramienta menor; Porcentaje de equipo de seguridad | 2.25h | 571.22 |
| 35 | 2.14 | Castillos ahogados KV en áreas de dintel de puertas y ventanas |  | 0.04d | 2024-08-02 | 2024-08-05 | 28SS+3d | 42.71d |  |  | Varilla corrugada acero de refuerzo del # 3 [1 kg]; Cemento gris normal [0.08 ton]; Arena en camión de 6 m3. [0.11 ton]; Grava de 3/4" (19 mm) en camión de 6 m3. [0.15 ton]; Agua potable [0.06 m³]; Revolvedora para concreto marca Cipsa modelo R10; Cuadrilla No 5 (1 Albañíl + 1 Ayudante general ); Herramienta menor; Porcentaje de equipo de seguridad | 0.35h | 771.26 |
| 36 | 2.15 | Castillo KBS para bajada de aguas grises con concreto hecho en obra con un f'c=200 kg/cm² |  | 0.27d | 2024-08-01 | 2024-08-01 | 28FS-2d | 38.52d | 0d |  | Duela de madera 1 x 4 x 8' [29.55 pt]; Clavo de 2 ½" [0.42 kg]; Alambre recocido del número 10. [0.43 kg]; Aceite quemado [0.41 litro]; Cemento gris normal [0.05 ton]; Arena en camión de 6 m3. [0.06 ton]; Grava de 3/4" (19 mm) en camión de 6 m3. [0.09 ton]; Agua potable [0.04 m³]; Cuadrilla No 3 (1 Of Carpintero + 1 Ayudante general); Cuadrilla No 27 (1 Albañil + 5 Peones); Cuadrilla No 5 (1 Albañíl + 1 Ayudante general ); Herramienta menor; Porcentaje de equipo de seguridad; Revolvedora para concreto marca Cipsa modelo R10; Vibrador de gasolina marca Felsa modelo vibromax cap. 12000 VPM con manguera de 4.00 m y cabezal de por 38 mm ( 1½") con moto | 2.75h | 1,505.3 |
| 37 | 2.16 | Trazo, nivelación y cimbra en escalera losa de cimentación y muros por medios manuales |  | 1.93d | 2024-08-01 | 2024-08-05 | 36 | 38.52d | 0d |  | Duela de madera 1 x 4 x 8' [28.5 pt]; Barrote de madera 2 x 4 x 8 [35.82 pt]; Barrote de madera 4 x 4 x 8 [24.71 pt]; Clavo de 2 ½" [3.35 kg]; Clavo con cabeza de 3 ½" [1.78 kg]; Aceite quemado [1.5 litro]; Alambre recocido del número 10. [9.56 kg]; Cuadrilla No 3 (1 Of Carpintero + 1 Ayudante general); Herramienta menor; Porcentaje de equipo de seguridad | 15.45h | 6,330.28 |
| 38 | 2.17 | Acero en escalera; armado transversal y longitudinal con Vars. #3 @ 15 cm |  | 2.66d | 2024-08-05 | 2024-08-07 | 37 | 38.52d | 0d |  | Varilla corrugada acero de refuerzo del # 3 [95.71 kg]; Alambre recocido del número 10. [9.56 kg]; Cuadrilla No 4 (1 Fierrero + 1 Ayudante general); Herramienta menor; Porcentaje de equipo de seguridad | 21.28h | 8,516.44 |
| 39 | 2.18 | Colado de escalera espesor de 12 cm; concreto fabricado en obra con un f'c=200 kg/cm² |  | 1.93d | 2024-08-07 | 2024-08-09 | 38 | 38.52d | 0d |  | Cemento gris normal [0.74 ton]; Arena en camión de 6 m3. [0.93 ton]; Grava de 3/4" (19 mm) en camión de 6 m3. [1.29 ton]; Agua potable [0.55 m³]; Revolvedora para concreto marca Cipsa modelo R10; Vibrador de gasolina marca Felsa modelo vibromax cap. 12000 VPM con manguera de 4.00 m y cabezal de por 38 mm ( 1½") con moto; Cuadrilla No 27 (1 Albañil + 5 Peones); Cuadrilla No 5 (1 Albañíl + 1 Ayudante general ); Herramienta menor; Porcentaje de equipo de seguridad | 16.48h | 11,631.49 |
| 40 | 2.19 | Taponamiento de celdas de block en muros planta baja para recibir losa de entrepiso |  | 0.28d | 2024-08-05 | 2024-08-08 | 30 | 39.39d | 0.87d |  | Bovedilla poliestireno 15 x 61 x 122 cm [2.97 pza]; Peon; Herramienta menor; Porcentaje de equipo de seguridad | 2.2h | 703.5 |
| 41 | 2.20 | Limpieza gruesa 01 durante la obra carga y retiro de escombros |  | 1.69d | 2024-08-05 | 2024-08-07 | 30 | 40.7d | 2.18d |  | Ayudante general; Herramienta menor; Porcentaje de equipo de seguridad | 13.53h | 1,220.06 |
| 42 | 2.21 | Fin de MUROS EN PLANTA BAJA | milestone | 0d | 2024-08-09 | 2024-08-09 | 41, 39, 40 | 38.52d | 0d |  |  |  |  |

| ID | WBS | Task | Type | Duration | Start | Finish | Predecessors | Total slack | Free slack | Resources | Work | Cost |
| --- | --- | --- | --- | --- | --- | --- | --- | --- | --- | --- | --- | --- |
| 43 | 3 | **LOSA DE ENTREPISO** |  | 7.55d | 2024-08-08 | 2024-08-14 | 21, 61 |  |  |  | 108.91h | 79,836.23 |
| 44 | 3.1 | Cimbra 01 en trabes en losa de entrepiso TR-1, TR-2, TR-3, TR-4, TR-5 |  | 1.78d | 2024-08-09 | 2024-08-12 | 42 | 38.52d | 0d | Clavo de 2 ½" [2.18 kg]; Clavo con cabeza de 3 ½" [1.14 kg]; Duela de madera 1 x 4 x 8' [6.73 pt]; Barrote de madera 2 x 4 x 8 [5.75 pt]; Barrote de madera 4 x 4 x 8 [7.81 pt]; Alambre recocido calibre 18 [1 kg]; Cuadrilla No 3 (1 Of Carpintero + 1 Ayudante general); Herramienta menor; Porcentaje de equipo de seguridad | 14.23h | 4,239.69 |
| 45 | 3.2 | Cimbra 02 en volados A1 y A2 |  | 0.32d | 2024-08-09 | 2024-08-12 | 44SS | 38.52d | 0d | Duela de madera 1 x 4 x 8' [1.65 pt]; Madera 1½" x 2" x 8 [8.66 pt]; Barrote de madera 2 x 4 x 8 [0.42 pt]; Barrote de madera 4 x 4 x 8 [9.75 pt]; Alambre recocido del número 10. [0.3 kg]; Clavo de 2 ½" [0.54 kg]; Clavo con cabeza de 3 ½" [0.72 kg]; Aceite quemado [0.51 litro]; Cuadrilla No 3 (1 Of Carpintero + 1 Ayudante general); Herramienta menor; Porcentaje de equipo de seguridad | 2.53h | 1,234.39 |
| 46 | 3.3 | Acero en trabes : TR-1, TR-2, TR-3, TR-4, TR-5 y CR-1 |  | 0.94d | 2024-08-08 | 2024-08-08 |  | 40.55d | 2.03d | Acero de refuerzo no. 2 (¼") fyp = 6000 kg/cm² [47.98 kg]; Varilla corrugada acero de refuerzo del # 3 [6.63 kg]; Varilla corrugada acero de refuerzo del # 4 [37.83 kg]; Varilla corrugada acero de refuerzo del # 5 [63.85 kg]; Alambre recocido calibre 18 [15.63 kg]; Cuadrilla No 4 (1 Fierrero + 1 Ayudante general); Herramienta menor; Porcentaje de equipo de seguridad | 7.48h | 6,945.3 |
| 47 | 3.4 | Acero en volados : A1 y A2 armado con Vars.#3, y #4 |  | 0.31d | 2024-08-12 | 2024-08-12 | 45, 46FF | 38.52d | 0d | Varilla corrugada acero de refuerzo del # 3 [1 kg]; Varilla corrugada acero de refuerzo del # 4 [1 kg]; Alambre recocido calibre 18 [1 kg]; Cuadrilla No 4 (1 Fierrero + 1 Ayudante general); Herramienta menor; Porcentaje de equipo de seguridad | 2.49h | 709.44 |
| 48 | 3.5 | Colocación viguetas y bovedilla losa de entrepiso de poliestireno 61 x 122 x 15 cm: vigueta pretensada V11-30 y V11-40 incluye enfajillado y apuntalamiento |  | 1d | 2024-08-12 | 2024-08-13 | 47 | 38.52d | 0d | Vigueta V11-30 mca Trabis [18.98 ml]; Vigueta V11-40 mca Trabis [39.85 ml]; Duela de madera 1 x 4 x 8' [242.54 pt]; Barrote de madera 2 x 4 x 8 [32.5 pt]; Barrote de madera 3 x 3 x 8 [153.07 pt]; Alambre recocido del número 10. [9.45 kg]; Clavo de 2 ½" [10.84 kg]; Clavo con cabeza de 3 ½" [22.92 kg]; Cuadrilla No 3 (1 Of Carpintero + 1 Ayudante general); Herramienta menor; Porcentaje de equipo de seguridad | 8h | 20,593.19 |
| 49 | 3.6 | Acero en entrepiso 02: colocación de malla electrosoldada 6x6/8-8 |  | 0.56d | 2024-08-13 | 2024-08-14 | 48 | 41.47d | 0d | Malla electrosoldada 6-6/8-8 [55.66 m²]; Alambre recocido del número 10. [1.19 kg]; Cuadrilla No 4 (1 Fierrero + 1 Ayudante general); Herramienta menor; Porcentaje de equipo de seguridad | 4.46h | 4,924.76 |
| 50 | 3.7 | Acero en entrepiso 03: colocación de acero vertical en el perimetro de losa de entrepiso |  | 0.5d | 2024-08-13 | 2024-08-14 | 49FF | 41.47d |  | Malla electrosoldada 6-6/8-8 [55.66 m²]; Alambre recocido del número 10. [1.19 kg]; Cuadrilla No 4 (1 Fierrero + 1 Ayudante general) | 4h | 4,764.58 |
| 51 | 3.8 | Plomeria sanitaria en entrepiso 01: trazo nivelacion por medios manuales |  | 0.1d | 2024-08-13 | 2024-08-14 | 48 | 38.52d | 0d | Cuadrilla No 10 (1 Of Plomero + 1 Ayudante plomero); Herramienta menor; Porcentaje de equipo de seguridad | 0.8h | 193.42 |
| 52 | 3.9 | Plomeria sanitaria en entrepiso 02: instalación de tubería PVC sanitario ramaleo |  | 1d | 2024-08-13 | 2024-08-14 | 48, 51FF | 38.52d | 0d | Tubo sanitario de extremos lisos Anger de PVC de 50 mm de diámetro [0.78 tramo]; Tubo PVC Ø=4" sanitario norma extremos lisos (100 mm) de diámetro [0.38 tramo]; Codo de 90° x 4" PVC sanitario a cementar (Hhhh) salida lateral-trasera de 4 x 2" [1 pza]; Codo 90° x4" PVC sanitario a cementar (Hhh) salida trasera de 4 x 2" [1 pza]; Tee PVC sanitario cementar (Hhh) 4 x 4 x 4" [1 pza]; Codo 90° x4" PVC sanitario a cementar (Hh) [2 pza]; Codo 45º x 4"- PVC sanitario - cementar (Hh) [1 pza]; Cople PVC sanitario - cementar (Hh) 4''. [2 pza]; Yee reducción PVC sanitario cementar (hhh) 4 x 4 x 2'' [1 pza]; Tee reducción central PVC sanitario cementar (Hhh) 4 x 4 x 2'' [1 pza]; Reducción bushing PVC sanitario a cementar (Hh) de 4 x 2" [1 pza]; Codo de 90° PVC a cementar (hh) (90º x 50 mm) [2 pza]; Codo 45ºx2" - PVC sanitario - cementar (Hh). [2 pza]; Cople - PVC sanitario - cementar (Hh) 2''. [2 pza]; Coladera PVC de plato salida lateral entrepiso anti goteras mca Duralon largo x ancho 21 cm x 12 cm; Ø=19 cm [1 pza]; Cemento PVC Weld-On® 704™ bote (946 ml) 1 quart [1 bote]; Cuadrilla No 10 (1 Of Plomero + 1 Ayudante plomero); Herramienta menor; Porcentaje de equipo de seguridad | 8.02h | 3,304.01 |
| 53 | 3.10 | Plomeria sanitaria en entrepiso 03: prueba hidrostática de hermeticidad en línea de drenaje central sanitario (ramaleo) |  | 0.1d | 2024-08-13 | 2024-08-14 | 48, 52FF | 38.52d | 0d | Cuadrilla No 10 (1 Of Plomero + 1 Ayudante plomero); Herramienta menor; Porcentaje de equipo de seguridad | 0.8h | 436.34 |
| 54 | 3.11 | Plomeria hidraúlica en entrepiso 01: trazo e instalacion de tubería CPVC (agua fria y agua caliente) |  | 2.51d | 2024-08-14 | 2024-08-16 | 53 | 38.52d | 0d | Tubo CPVC/cts cementar Ø=½" (12.6mm) tramo de 3.05 m [5.8 tramo]; Codo de 90° x ½" CPVC cts boc. Esp. a cementar (Hh) de ½" (13mm) [18 pza]; Tee CPVC/cts cementar (Hhh) de ½" (13mm) [18 pza]; Cople CPVC-cts a cementar rosca código (Hh) de ½" (13mm) [10 pza]; Tapón capa CPVC/cts cementar (Hh) de ½" (13 mm) [12 pza]; Adaptador macho de CPVC/cts cementar/rosca de ½" (13 mm) [17 pza]; Tapón hembra ½" (13mm) mca POLIMEX 157 [10 pza]; Tapon registro PVC Sanitario de 4" con tapa de bronce ajustable [0.4 pza]; Limpiador PVC y CPVC primer morado 473 ml mca Oatey [0.46 pza]; Cemento CPVC FlowGuard® color blanco 946 ml [0.46 bote]; Cuadrilla No 10 (1 Of Plomero + 1 Ayudante plomero); Herramienta menor; Porcentaje de equipo de seguridad | 20.09h | 6,374.35 |
| 55 | 3.12 | Plomeria hidraúlica en entrepiso 02: prueba hidrostática y de hermeticidad en tuberia de CPVC (agua caliente y agua fria) |  | 0.29d | 2024-08-14 | 2024-08-15 | 54SS | 38.87d | 0d | Cuadrilla No 10 (1 Of Plomero + 1 Ayudante plomero); Herramienta menor; Porcentaje de equipo de seguridad | 2.3h | 558.84 |
| 56 | 3.13 | Plomeria hidraúlica en entrepiso 03: Instalacion de tubería PVC hidraulica para condensados (HVAC) |  | 0.3d | 2024-08-14 | 2024-08-15 | 53, 55FF | 38.87d | 0d | Tubo PVC sanitario extremos lisos anger de 3" (75mm) [14.78 ml]; Tubo conduit PVC liso eléctrico ligero de ½" (13mm) presentación en tramo de 3.00 m [4.38 ml]; Conector conduit R-0 ligero inserción rosca (Hm) de ½" [4 pza]; Curva conduit 90°x ½" R-0 de PVC eléctrico ligero - In/Rc (Hm) [4 pza]; Codo 45º - pvc sanitario - cementar (Hh) 3''. [4 pza]; Cuadrilla No 10 (1 Of Plomero + 1 Ayudante plomero); Herramienta menor; Porcentaje de equipo de seguridad | 2.39h | 1,158.69 |
| 57 | 3.14 | Electricidad en entrepiso 01: ramaleo para contactos, luminarias y apagadores de poliducto ½" (13 mm) |  | 0.76d | 2024-08-13 | 2024-08-15 | 48, 56FF | 38.87d | 0d | Tubería poliflex naranja con guía de ½" para uso eléctrico presentación de rollo de 100 m marca Poliflex [0.5 rollo]; Caja octagonal 4" mca ITSA reforzada [10 pza]; Cuadrilla No 9 (1 Of Electricista + 1 Ayudante eléctrico); Herramienta menor; Porcentaje de equipo de seguridad | 6.05h | 2,250.89 |
| 58 | 3.15 | Telecomunicaciones en entrepiso: ramaleo de poliducto ½" para TV, telefono, internet |  | 2d | 2024-08-13 | 2024-08-15 | 48, 57FF | 38.87d | 0d | Tubería poliflex naranja con guía de ½" para uso eléctrico presentación de rollo de 100 m marca Poliflex [0.17 rollo]; Cuadrilla No 9 (1 Of Electricista + 1 Ayudante eléctrico); Herramienta menor; Porcentaje de equipo de seguridad | 16h | 4,106.04 |
| 59 | 3.16 | Colado de concreto en losa de entrepiso: capa de compresion 5 cm, concreto f'c=200 kg/cm² |  | 1.16d | 2024-08-15 | 2024-08-16 | 58 | 38.87d | 0d | Concreto premezclado bombeable f'c=200 kg/cm² normal clase I TMA 20 mm revenimiento hasta 14 3.5 cm [5.25 m³]; Curafest MC-320 blanco marca FESTER cubeta 19 litros [0.35 cub]; Vibrador de gasolina marca Felsa modelo vibromax cap. 12000 VPM con manguera de 4.00 m y cabezal de por 38 mm ( 1½") con moto; Cuadrilla No 27 (1 Albañil + 5 Peones); Herramienta menor; Porcentaje de equipo de seguridad | 9.27h | 18,042.28 |
| 60 | 3.17 | Fin de LOSA DE ENTREPISO | milestone | 0d | 2024-08-16 | 2024-08-16 | 59, 61SS | 38.87d |  |  |  |  |
| 61 | 4 | **MUROS EN PLANTA ALTA** |  | 11.18d | 2024-08-14 | 2024-08-27 |  |  |  |  | 8.37h | 3,661.05 |
| 62 | 4.1 | Trazo y desplante de muros planta alta sobre losa de entrepiso para muro de mampostería |  | 0.68d | 2024-08-14 | 2024-08-14 |  | -6.07d | 0d | Cemento gris normal [0.05 ton]; Arena en camión de 6 m3. [0.16 ton]; Agua potable [0.03 m³]; Block entero gris hueco 12 x 20 x 40 cm [113.37 pza]; Cuadrilla No 5 (1 Albañíl + 1 Ayudante general ); Peón; Herramienta menor; Porcentaje de equipo de seguridad | 8.37h | 3,661.05 |
| 63 | 4.2 | Muros y castillos K1, K2, K2A, K3, K4 en planta alta pacialidad 01: de block gris pesado 12x20x40 cm |  | 4d | 2024-08-14 | 2024-08-20 | 62 | -6.07d | 0d |  |  |  |
| 64 | 4.3 | Plomeria sanitaria en muros palnta alta 01: tubería PVC para linea de aguas grises |  | 4d | 2024-08-14 | 2024-08-20 | 63SS | -4.57d | 0d |  |  |  |
| 65 | 4.4 | Plomeria hidraúlica en muros planta alta 01: sondeo de tubería CPVC (agua fria y agua caliente) para colocación de puntas |  | 4d | 2024-08-14 | 2024-08-20 | 63SS, 64FF | -4.57d | 0d |  |  |  |
| 66 | 4.5 | Electricidad en muros planta alta 01: poliducto 1¼" (32 mm) color naranja bajo firme de concreto hacia centro de carga según planos IE-01 |  | 4d | 2024-08-14 | 2024-08-20 | 63SS, 65FF | -4.57d | 0d |  |  |  |
| 67 | 4.6 | Cadena bajo ventana a base de block dala 12x15x40 cm con refuerzo horizontal c |  | 2d | 2024-08-16 | 2024-08-20 | 63FS-2d | 0.43d |  |  |  |  |
| 68 | 4.7 | Muros y castillos K1, K2, K2A, K3, K4, K5 en planta alta pacialidad 02: de block gris pesado 12x20x40 cm |  | 3d | 2024-08-20 | 2024-08-23 | 63 | -6.07d | 0d |  |  |  |
| 69 | 4.8 | Plomeria sanitaria en muros alta 02: tubería PVC para linea de aguas grises varios Ø=2" y Ø=4" |  | 7d | 2024-08-14 | 2024-08-23 | 62 | -2.57d | 0d |  |  |  |
| 70 | 4.9 | Dintel corrido DIN-1 sobre puertas y ventanas a H=2.09 m |  | 1d | 2024-08-23 | 2024-08-24 | 68 | -6.07d | 0d |  |  |  |
| 71 | 4.10 | Muros y castillos K1, K2, K2A, K3, K4, K5 en planta alta pacialidad 03: enrrase de block gris pesado 12x20x40 cm |  | 1d | 2024-08-26 | 2024-08-27 | 70, 68FF, 76 | -6.07d | 0d |  |  |  |
| 72 | 4.11 | Colocación de placa base de 200 x 150 x 6 mm, A-36 (¼") con 4 anclas a base de redondo Ø=½" (13mm) (soporte de pergolado) |  | 1d | 2024-08-24 | 2024-08-26 | 70 | -4.57d | 0d |  |  |  |
| 73 | 4.12 | Plomeria sanitaria en muros planta alta 02: tubería PVC para linea de aguas grises varios Ø=2" y Ø=4" |  | 5d | 2024-08-20 | 2024-08-26 | 62FS+4d | -4.57d | 0d |  |  |  |
| 74 | 4.13 | Plomeria hidraúlica en muros planta alta 02: sondeo de tubería CPVC (agua fria y agua caliente) para colocación de puntas |  | 5d | 2024-08-20 | 2024-08-26 | 62FS+4d | -4.57d | 0d |  |  |  |
| 75 | 4.14 | Electricidad en muros planta alta 02: poliducto 1¼" (32 mm) color naranja bajo firme de concreto hacia centro de carga según planos IE-01 |  | 5d | 2024-08-20 | 2024-08-26 | 66 | -4.57d | 0d |  |  |  |
| 76 | 4.15 | Castillos ahogados KV en áreas de dintel de puertas y ventanas con acero vertical Vars. #3 |  | 1d | 2024-08-24 | 2024-08-26 | 70 | -6.07d | 0d |  |  |  |
| 77 | 4.16 | Taponamiento de celdas de block en muros planta alta para recibir losa de azotea |  | 0.5d | 2024-08-27 | 2024-08-28 | 71 | -6.07d | 0d |  |  |  |
| 78 | 4.17 | Plomeria hidraúlica en muros planta alta 02: prueba hidrostática de hermeticidad en línea de agua fria y caliente |  | 10d | 2024-08-14 | 2024-08-27 | 63SS | -5.57d | 0d |  |  |  |
| 79 | 4.18 | Limpieza gruesa planta alta 02 durante la obra carga y retiro de escombros |  | 10d | 2024-08-14 | 2024-08-27 | 63SS | -5.57d | 0d |  |  |  |
| 80 | 4.19 | Fin de MUROS EN PLANTA ALTA | milestone | 0d | 2024-08-28 | 2024-08-28 | 79, 77, 78, 75, 74, 73, 76 | -6.07d | 0d |  |  |  |

| ID | WBS | Task | Type | Duration | Start | Finish | Predecessors | Total slack | Free slack |
| --- | --- | --- | --- | --- | --- | --- | --- | --- | --- |
| 81 | 5 | **LOSA DE AZOTEA** |  | 5.5d | 2024-08-28 | 2024-09-03 | 61, 80 |  |  |
| 82 | 5.1 | Colocación viguetas y bovedilla losa de azotea de poliestireno 61 x 122 x 15 cm: vigueta pretensada V11-30 y V11-40 |  | 0.5d | 2024-08-28 | 2024-08-28 | 61 | -6.02d | 0d |
| 83 | 5.2 | Cimbra 01 en losa de azotea: incluye: cimbra en frontera de la losa, apuntalamiento, enfajillado |  | 1d | 2024-08-28 | 2024-08-29 | 82 | -6.02d | 0d |
| 84 | 5.3 | Cimbra 02 en volados losa de azotea, incluye: cimbra en frontera de la losa, apuntalamiento, enfajillado, amarres |  | 1d | 2024-08-28 | 2024-08-29 | 61, 83FF | -6.02d | 0d |
| 85 | 5.4 | Plomeria sanitaria en losa de azotea 01: trazo nivelacion por medios manuales para linea de aguas grises según plano IS-01 |  | 1d | 2024-08-29 | 2024-08-30 | 82, 84 | -3.02d | 0d |
| 86 | 5.5 | Plomeria sanitaria en losa de azotea 02: instalación de tubería PVC sanitario Ø=2" (50 mm) el ramaleo incluye: codos, tees, yees, coples, coladera, reducciones bushing |  | 1d | 2024-08-29 | 2024-08-30 | 82, 85FF | -3.02d | 0d |
| 87 | 5.6 | Plomeria sanitaria en losa de azotea 03: prueba hidrostática de hermeticidad en línea de drenaje central sanitario (ramaleo) a una carga de 3 kg/cm² a 4 hr de duracion. |  | 1d | 2024-08-29 | 2024-08-30 | 82, 86FF | -3.02d | 0d |
| 88 | 5.7 | Plomeria hidraúlica en zotea 01: trazo e instalacion de tubería CPVC (agua fria y agua caliente) |  | 1d | 2024-08-29 | 2024-08-30 | 82, 87FF | -3.02d | 0d |
| 89 | 5.8 | Plomeria hidraúlica en losa de azotea 02: prueba hidrostática y de hermeticidad en tuberia de CPVC (agua caliente y agua fria) |  | 1d | 2024-08-29 | 2024-08-30 | 82, 88FF | -3.02d | 0d |
| 90 | 5.9 | Electricidad en losa de azotea 01: ramaleo para contactos, luminarias y apagadores de poliducto ½" (13 mm) color naranja bajo firme de concreto según planos IE-00 |  | 1d | 2024-08-29 | 2024-08-30 | 84 | -6.02d | 0d |
| 91 | 5.10 | Acero 01 en losa de azotea: malla electrosoldada 6x6/8-8, acero en refuerzos perimetrales de la losa; cerramientos perimetrales CR-1 sección 12 x 20 cm, armadas según plano E-07 |  | 1d | 2024-08-30 | 2024-08-31 | 90 | -6.02d | 0d |
| 92 | 5.11 | Acero 02: colocación de acero vertical en el perimetro de losa de azotea, armada con Vars #3 @ 61 cm según especificaciones de proyecto; con longitudes, ganchos y separaciones indicadas en el plano estructural E-05 |  | 1d | 2024-08-31 | 2024-09-02 | 91 | -6.02d | 0d |
| 93 | 5.12 | Colado de concreto en losa de azotea: capa de compresion 5 cm, concreto premezclado f'c=200 kg/cm², tipo bombeable, TMA de 19 mm |  | 1d | 2024-09-02 | 2024-09-03 | 92 | -6.02d | 0d |
| 94 | 5.13 | Fin de LOSA DE AZOTEA | milestone | 0d | 2024-09-03 | 2024-09-03 | 93 | -6.02d | 0d |
| 95 | 6 | **ALBAÑILERIA EN AZOTEA** |  | 6.5d | 2024-09-06 | 2024-09-13 | 81, 94 |  |  |
| 96 | 6.1 | Trazo y desplante sobre losa de azotea para estructuras de mampostería (pretil) a base de block gris pesado |  | 1d | 2024-09-06 | 2024-09-06 | 94 | -8.08d | 0d |
| 97 | 6.2 | Fabricación de dintel corrido DIN-1 sobre muro de desplante block dala 12x20x40 cm con refuerzo horizontal |  | 1d | 2024-09-07 | 2024-09-09 | 96 | -8.08d | 0d |
| 98 | 6.3 | Construccion de muro de block para pretil |  | 1d | 2024-09-09 | 2024-09-10 | 97 | -8.08d | 0d |
| 99 | 6.4 | Repello en pretil a base de mezcla cemento-arena 1:4 y afine con mezcla cemento arena 1:3 |  | 1d | 2024-09-10 | 2024-09-11 | 98 | -8.08d | 0d |
| 100 | 6.5 | Chaflan de 10 x 10 con mezcla cemento arena proporción 1:4 |  | 0.5d | 2024-09-11 | 2024-09-11 | 99 | -8.08d | 0d |
| 101 | 6.6 | Fabricación de diamantes en losa de azotea a base de mezcla cemento arena proporcion 1:4 |  | 1d | 2024-09-11 | 2024-09-12 | 100 | -8.08d | 0d |
| 102 | 6.7 | Fabricación de base para tinaco en losa de azotea a base de mezcla cemento arena proporcion 1:4 |  | 1d | 2024-09-12 | 2024-09-13 | 101 | -8.08d | 0d |
| 103 | 6.8 | Fin de ALBAÑILERIA EN AZOTEA | milestone | 0d | 2024-09-13 | 2024-09-13 | 102 | -8.08d | 0d |
| 104 | 7 | **PLOMERIA SANITARIA EN EXTERIORES** |  | 4d | 2024-09-06 | 2024-09-10 | 81, 94 |  |  |
| 105 | 7.1 | Trazo y nivelacion por medios manuales para linea de aguas grises en pasillo servicio |  | 0.5d | 2024-09-06 | 2024-09-06 | 94 | 3.81d | 0d |
| 106 | 7.2 | Excavación manual en pasillo para linea de aguas grises |  | 1d | 2024-09-06 | 2024-09-07 | 105 | 3.81d | 0d |
| 107 | 7.3 | Cama de arena en cepas para alojar tuberia sanitaria |  | 0.5d | 2024-09-07 | 2024-09-09 | 106 | 3.81d | 0d |
| 108 | 7.4 | Tubo PVC sanitario Ø=2" (50 mm) norma |  | 2d | 2024-09-09 | 2024-09-11 | 107 | 3.81d | 0d |
| 109 | 7.5 | Tubo PVC sanitario Ø=4" (50 mm) norma |  | 2d | 2024-09-09 | 2024-09-11 | 108SS | 3.81d | 0d |
| 110 | 7.6 | Tapón registro Ø=4" PVC sanitario con tapa de bronce ajustable |  | 2d | 2024-09-09 | 2024-09-11 | 109SS | 3.81d | 0d |
| 111 | 7.7 | Codo PVC 90º x 4" sanitario cementar de (90° x 100 mm) |  | 2d | 2024-09-09 | 2024-09-11 | 110SS | 3.81d | 0d |
| 112 | 7.8 | Yee PVC sanitario 4 x 4 x 4" PVC cementar (hhh) |  | 2d | 2024-09-09 | 2024-09-11 | 111SS | 3.81d | 0d |
| 113 | 7.9 | Cople PVC sanitario a cementar (hh) Ø=4" |  | 2d | 2024-09-09 | 2024-09-11 | 112SS | 3.81d | 0d |
| 114 | 7.10 | Yee PVC reducción sanitario 4 x 4 x 2" cementar (hhh) |  | 2d | 2024-09-09 | 2024-09-11 | 113SS | 3.81d | 0d |
| 115 | 7.11 | Reducción bushing PVC sanitario cementar (hh) 4" x 2'' |  | 2d | 2024-09-09 | 2024-09-11 | 114SS | 3.81d | 0d |
| 116 | 7.12 | Codo PVC 45º x 2 sanitario cementar de (45° x 50 mm |  | 2d | 2024-09-09 | 2024-09-11 | 115SS | 3.81d | 0d |
| 117 | 7.13 | Cople PVC sanitario cementar 2" (50 mm) |  | 2d | 2024-09-09 | 2024-09-11 | 116SS | 3.81d | 0d |
| 118 | 7.14 | Relleno compactado manualmente en cepas |  | 2d | 2024-09-09 | 2024-09-11 | 117SS | 3.81d | 0d |
| 119 | 7.15 | Fin de PLOMERIA SANITARIA EN EXTERIORES | milestone | 0d | 2024-09-11 | 2024-09-11 | 118 | 3.81d | 2.31d |

| ID | WBS | Task | Type | Duration | Start | Finish | Predecessors | Total slack | Free slack |
| --- | --- | --- | --- | --- | --- | --- | --- | --- | --- |
| 120 | 8 | **PLOMERIA HIDRAÚLICA EN EXTERIORES** |  | 3d | 2024-09-06 | 2024-09-10 | 81, 94 |  |  |
| 121 | 8.1 | Trazo y nivelacion por medios manuales para Inst hidraulica en exteriores |  | 0.5d | 2024-09-06 | 2024-09-06 | 94 | 19.81d | 0d |
| 122 | 8.2 | Excavación manual en pasillo de servicio para Inst hidraúlica |  | 1d | 2024-09-06 | 2024-09-07 | 121 | 19.81d | 0d |
| 123 | 8.3 | Tubería Ø=½ (12.6 mm) CPVC mca FlowGuard® CPVC |  | 1.5d | 2024-09-07 | 2024-09-10 | 122 | 19.81d | 0d |
| 124 | 8.4 | Codo 90°x½" CPVC mca FlowGuard® CPVC |  | 1.5d | 2024-09-07 | 2024-09-10 | 123SS | 19.81d | 0d |
| 125 | 8.5 | Cople ½" CPVC mca FlowGuard® CPVC |  | 1.5d | 2024-09-07 | 2024-09-10 | 124SS | 19.81d | 0d |
| 126 | 8.6 | Conector macho ½" CPVC mca FlowGuard® CPVC |  | 1.5d | 2024-09-07 | 2024-09-10 | 125SS | 19.81d | 0d |
| 127 | 8.7 | Prueba hidrostática y de hermeticidad de acuerdo en líneas de agua fria |  | 1.5d | 2024-09-07 | 2024-09-10 | 126SS | 19.81d | 0d |
| 128 | 8.8 | Tapón hembra ½" mca Polimex color naranja |  | 1.5d | 2024-09-07 | 2024-09-10 | 127SS | 19.81d | 0d |
| 129 | 8.9 | Realización de prueba hidrostática de hermeticidad en línea de agua fria |  | 1.5d | 2024-09-07 | 2024-09-10 | 128SS | 19.81d | 0d |
| 130 | 8.10 | Salida hiraulica para llave de jardin |  | 1.5d | 2024-09-07 | 2024-09-10 | 129SS | 19.81d | 0d |
| 131 | 8.11 | Cuadro de medición de agua fria de tubería CPVC ½" mca FlowGuard® CPVC |  | 1.5d | 2024-09-07 | 2024-09-10 | 130SS | 19.81d | 0d |
| 132 | 8.12 | Fin de PLOMERIA HIDRAÚLICA EN EXTERIORES | milestone | 0d | 2024-09-10 | 2024-09-10 | 131 | 19.81d |  |
| 133 | 9 | **ALBAÑILERIA INTERIOR MUROS Y TECHOS PLANTA BAJA** |  | 9d | 2024-09-13 | 2024-09-26 | 95, 81, 119 |  |  |
| 134 | 9.1 | Detallado de muros interiores planta baja y escalera con mortero cemento arena cernida 1:4 |  | 2d | 2024-09-13 | 2024-09-18 |  | 1.5d | 0d |
| 135 | 9.2 | Aplanado de yeso-agua de espesor promedio en muros interiores planta baja |  | 5d | 2024-09-18 | 2024-09-24 | 134 | 1.5d | 0d |
| 136 | 9.3 | Aplanado de yeso-agua de espesor promedio en plafones en losa de entrepiso |  | 5d | 2024-09-18 | 2024-09-24 | 135SS | 1.5d | 0d |
| 137 | 9.4 | Perfilado de aristas en vanos de puertas y ventanas planta baja base de yeso-agua en trabes planta baja |  | 5d | 2024-09-18 | 2024-09-24 | 136SS | 1.5d | 0d |
| 138 | 9.5 | Limpieza gruesa durante la obra carga y retiro de escombros |  | 2d | 2024-09-24 | 2024-09-26 | 137 | 1.5d | 0d |
| 139 | 9.6 | Fin de ALBAÑILERIA INTERIOR MUROS Y TECHOS PLANTA BAJA | milestone | 0d | 2024-09-26 | 2024-09-26 | 138, 136, 135 | 1.5d | 0d |
| 140 | 10 | **ALBAÑILERIA INTERIOR MUROS Y TECHOS PLANTA ALTA** |  | 6d | 2024-09-26 | 2024-10-05 | 95, 208 |  |  |
| 141 | 10.1 | Detallado de muros interiores planta alta con mortero cemento arena cernida 1:4 |  | 2d | 2024-09-26 | 2024-09-30 | 139 | 1.5d | 0d |
| 142 | 10.2 | Aplanado de yeso-agua de muros interiores planta |  | 4d | 2024-09-30 | 2024-10-05 | 141 | 1.5d | 0d |
| 143 | 10.3 | Aplanado de yeso-agua en plafones en losa de azotea |  | 4d | 2024-09-30 | 2024-10-05 | 142SS | 1.5d | 0d |
| 144 | 10.4 | Aplanado de mezcla cemento arena en area húmedas de muros interiores planta alta hasta |  | 3d | 2024-09-26 | 2024-10-02 | 139 | 1.5d | 0d |
| 145 | 10.5 | Perfilado de aristas en vanos de puertas y ventanas planta alta a base de yeso-agua muestreado |  | 4d | 2024-09-30 | 2024-10-05 | 143SS | 1.5d | 0d |
| 146 | 10.6 | Fabricación de sardinel de sección de 0.10 x 0.10 m. con concreto f'c= 150 kg/cm² hecho en obra |  | 3d | 2024-09-26 | 2024-10-02 | 144SS | 4.5d | 3d |
| 147 | 10.7 | Limpieza gruesa durante la obra carga y retiro de escombros producto de la obra y desperdicios de materiales |  | 6d | 2024-09-26 | 2024-10-05 | 144SS | 1.5d |  |
| 148 | 10.8 | Fin de ALBAÑILERIA INTERIOR MUROS Y TECHOS PLANTA ALTA | milestone | 0d | 2024-10-05 | 2024-10-05 | 145, 146, 142, 143 | 1.5d |  |

| ID | WBS | Task | Type | Duration | Start | Finish | Predecessors | Total slack | Free slack |
| --- | --- | --- | --- | --- | --- | --- | --- | --- | --- |
| 149 | 11 | **ALBAÑILERIA EXTERIOR PLANTA BAJA** |  | 6d | 2024-09-13 | 2024-09-21 | 95, 81 |  |  |
| 150 | 11.1 | Detallado de muros exteriores planta baja con mortero cemento arena cernida 1:4 |  | 2d | 2024-09-13 | 2024-09-17 | 94 | 11.25d | 0d |
| 151 | 11.2 | Recubrimiento en muros exteriores planta baja a base de stucco (plaster uniblock), color blanco marca Uniblock |  | 4d | 2024-09-17 | 2024-09-21 | 150 | 11.25d | 0d |
| 152 | 11.3 | Aplanado de yeso-agua en plafones en losa de entrepiso |  | 6d | 2024-09-13 | 2024-09-21 | 94 | 11.25d |  |
| 153 | 11.4 | Aplanado en fachada planta baja a base de cemento arena proporción 1:4 |  | 6d | 2024-09-13 | 2024-09-21 | 94 | 11.25d |  |
| 154 | 11.5 | Limpieza gruesa durante la obra carga y retiro de escombros producto de la obra y desperdicios de materiales |  | 6d | 2024-09-13 | 2024-09-21 | 94 | 11.25d |  |
| 155 | 11.6 | Fin de ALBAÑILERIA EXTERIOR PLANTA BAJA | milestone | 0d | 2024-09-21 | 2024-09-21 | 151 | 11.25d |  |
| 156 | 12 | **ALBAÑILERIA EXTERIOR PLANTA ALTA** |  | 3d | 2024-09-13 | 2024-09-18 | 95, 81 |  |  |
| 157 | 12.1 | Detallado de muros exteriores planta alta con mortero cemento arena cernida 1:4 |  | 1d | 2024-09-13 | 2024-09-13 | 94 | -1.75d | 0d |
| 158 | 12.2 | Recubrimiento en muros exteriores planta alta a base de stucco (plaster uniblock), color blanco marca Uniblock |  | 2d | 2024-09-14 | 2024-09-18 | 157 | -1.75d | 0d |
| 159 | 12.3 | Aplanado en fachada planta alta a base de cemento arena proporción 1:4 |  | 2d | 2024-09-14 | 2024-09-18 | 157 | -1.75d | 0d |
| 160 | 12.4 | Fin de ALBAÑILERIA EXTERIOR PLANTA ALTA | milestone | 0d | 2024-09-18 | 2024-09-18 | 159 | -1.75d | 0d |
| 161 | 13 | **TABLA ROCA** |  | 8.12d | 2024-09-18 | 2024-09-27 | 95, 81, 156 | 6.12d |  |
| 162 | 13.1 | Muro tablaroca divisorio convencional 2 caras en planta baja a base de perfiles de acero galvanizado de ancho 3 5/8" (9.20 cm) + 2 caras de panel tablaroca de yeso núcleo regular (NR) ½" (1.27 cm) |  | 3d | 2024-09-18 | 2024-09-21 | 160 | 11.25d | 0d |
| 163 | 13.2 | Muro tablaroca divisorio convencional 2 caras en planta alta a base de perfiles de acero galvanizado de ancho 3 5/8" (9.20 cm) + 2 caras de panel tablaroca de yeso núcleo regular (NR) ½" (1.27 cm |  | 3d | 2024-09-18 | 2024-09-21 | 162SS, 160SS | 11.25d | 5.12d |
| 164 | 13.3 | Fin de TABLA ROCA | milestone | 0d | 2024-09-27 | 2024-09-27 | 163, 165, 173, 182 | 6.12d |  |
| 165 | 14 | **ACABADOS CERÁMICA EN PISOS Y MUROS** |  | 8d | 2024-09-18 | 2024-09-27 | 95, 81, 156 |  |  |
| 166 | 14.1 | Revestimiento en area de baños con azulejo modelo Alhena color blanco, formato 31 x 61 marca Interceramic |  | 2d | 2024-09-18 | 2024-09-20 | 160 | 6.25d | 0d |
| 167 | 14.2 | Piso antiderrapante, formato 20 x 20 cm, color blanco mca Interceramic modelo Valparaiso |  | 2d | 2024-09-18 | 2024-09-20 | 166SS | 6.25d | 0d |
| 168 | 14.3 | Piso cerámico en planta alta modelo Agape color blanco, formato 60 x 60 cm, marca Interceramic |  | 2d | 2024-09-20 | 2024-09-23 | 167 | 6.25d | 0d |
| 169 | 14.4 | Piso cerámico en escalera (huella y peralte) modelo Agape color blanco, formato 60 x 60 cm, marca Interceramic |  | 2d | 2024-09-23 | 2024-09-25 | 168 | 6.25d | 0d |
| 170 | 14.5 | Piso cerámico en planta baja y alta modelo Agape color blanco, formato 60 x 60 cm, marca Interceramic |  | 2d | 2024-09-25 | 2024-09-27 | 169 | 6.25d | 0d |
| 171 | 14.6 | Chapado de cantera en muros exteriores color blanco limón de 3/4" de espesor, medida 40 x 40 cm en área de fachada |  | 2d | 2024-09-18 | 2024-09-20 | 160 | 12.25d | 6d |
| 172 | 14.7 | Fin de ACABADOS CERÁMICA EN PISOS Y MUROS | milestone | 0d | 2024-09-27 | 2024-09-27 | 170, 171 | 6.25d |  |

| ID | WBS | Task | Type | Duration | Start | Finish | Predecessors | Total slack | Free slack | Constraint |
| --- | --- | --- | --- | --- | --- | --- | --- | --- | --- | --- |
| 173 | 15 | **PINTURA E IMPERMEBILIZANTE** |  | 2d | 2024-09-18 | 2024-09-20 | 95, 81, 156 |  |  |  |
| 174 | 15.1 | Pintura vinilica linea vinimex total marca Comex en muros exteriores |  | 2d | 2024-09-18 | 2024-09-20 | 160 | -1.75d | 0d |  |
| 175 | 15.2 | Pintura vinilica linea vinimex total marca Comex en plafones exteriores de entrepiso |  | 2d | 2024-09-18 | 2024-09-20 | 160, 174SS | -1.75d | 0d |  |
| 176 | 15.3 | Pintura vinilica linea vinimex total marca Comex en muros interiores planta baja, una mano de sellador y dos de pintura |  | 2d | 2024-09-18 | 2024-09-20 | 160, 175SS | -1.75d | 0d |  |
| 177 | 15.4 | Pintura vinilica linea vinimex total marca Comex en plafones de entrepiso, una mano de sellador y dos de pintura |  | 2d | 2024-09-18 | 2024-09-20 | 176SS | -1.75d | 0d |  |
| 178 | 15.5 | Pintura vinilica linea vinimex total marca Comex en muros interiores planta alta, una mano de sellador y dos de pintura |  | 2d | 2024-09-18 | 2024-09-20 | 177SS | -1.75d | 0d |  |
| 179 | 15.6 | Pintura vinilica linea vinimex total marca Comex en losa de azotea, una mano de sellador y dos de pintura. |  | 2d | 2024-09-18 | 2024-09-20 | 177SS | -1.75d | 0d |  |
| 180 | 15.7 | Impermeabilizante top aislante termico acrilico elastomerico fibratado 10 años mca Comex base aguas aplicado en azoteas |  | 2d | 2024-09-18 | 2024-09-20 | 160 | -1.75d | 0d |  |
| 181 | 15.8 | Fin de PINTURA E IMPERMEABILIZANTE | milestone | 0d | 2024-09-20 | 2024-09-20 | 180, 179, 178, 177, 176, 174, 175 | -1.75d | 0d |  |
| 182 | 16 | **INSTALACION DE GAS LP** |  | 2d | 2024-09-20 | 2024-09-23 | 81, 156, 95, 181 |  |  |  |
| 183 | 16.1 | Tubo de cobre tipo "L" de ½" (13 mm) de diámetro |  | 2d | 2024-09-20 | 2024-09-23 | 181 | -1.75d | 0d |  |
| 184 | 16.2 | Codo de cobre de 90° x ½" (90° x 13 mm) |  | 2d | 2024-09-20 | 2024-09-23 | 183SS | -1.75d | 0d |  |
| 185 | 16.3 | Conector macho cobre ½" (13 mm) |  | 2d | 2024-09-20 | 2024-09-23 | 184SS | -1.75d | 0d |  |
| 186 | 16.4 | Tapón capa cobre ½" (13 mm) |  | 2d | 2024-09-20 | 2024-09-23 | 185SS | -1.75d | 0d |  |
| 187 | 16.5 | Línea de llenado con tubo de cobre tipo "K" de 19 mm. De diámetro |  | 2d | 2024-09-20 | 2024-09-23 | 186SS | -1.75d | 0d |  |
| 188 | 16.6 | Válvula de llenado para línea de gas LP para tanque estacionario |  | 2d | 2024-09-20 | 2024-09-23 | 187SS | -1.75d | 0d |  |
| 189 | 16.7 | Cople de cobre de 19 mm. |  | 2d | 2024-09-20 | 2024-09-23 | 188SS | -1.75d | 0d |  |
| 190 | 16.8 | Codo de cobre de 90° x 19 mm |  | 2d | 2024-09-20 | 2024-09-23 | 189SS | -1.75d | 0d |  |
| 191 | 16.9 | Tee de cobre de 19 mm |  | 2d | 2024-09-20 | 2024-09-23 | 190SS | -1.75d | 0d |  |
| 192 | 16.10 | Relevo de presión para línea de gas LP para tanque estacionario |  | 2d | 2024-09-20 | 2024-09-23 | 191SS | -1.75d | 0d |  |
| 193 | 16.11 | Desfogue de presión para línea de gas LP para tanque estacionario |  | 2d | 2024-09-20 | 2024-09-23 | 192SS | -1.75d | 0d |  |
| 194 | 16.12 | Fin de INSTALACIÓN DE GAS LP | milestone | 0d | 2024-09-23 | 2024-09-23 | 193 | -1.75d | 0d |  |
| 195 | 17 | **CANCELERIA, CARPINTERIA Y HERRERIA** |  | 1d | 2024-09-23 | 2024-09-24 | 173 |  |  | start no earlier than 2024-09-21 |
| 196 | 17.1 | Ventana compuesta XO/O de 1.68m x 1.24m en aluminio de 1.5" color natural y vidrio claro de 3mm |  | 1d | 2024-09-24 | 2024-09-24 | 182 | -1.88d | 0d |  |
| 197 | 17.2 | Ventana corrediza XO de 1.24m x 1.00m en aluminio de 1.5" color natural con vidrio claro de 3mm |  | 1d | 2024-09-24 | 2024-09-24 | 196SS | -1.88d | 0d |  |
| 198 | 17.3 | Ventana corrediza XO de 1.24m x 1.26m en aluminio de 1.5" color natural con vidrio claro de 3mm |  | 1d | 2024-09-24 | 2024-09-24 | 197SS | -1.88d | 0d |  |
| 199 | 17.4 | Ventana corrediza XO de 0.90m x 0.62m en aluminio de 1.5" color natural con vidrio opaco de 4mm |  | 1d | 2024-09-24 | 2024-09-24 | 198SS | -1.88d | 0d |  |
| 200 | 17.5 | Ventana fija de 1.00m x 1.26m en aluminio de 1.5" color natural con vidrio claro de 3mm |  | 1d | 2024-09-24 | 2024-09-24 | 199SS | -1.88d | 0d |  |
| 201 | 17.6 | Bastidor de aluminio |  | 1d | 2024-09-24 | 2024-09-24 | 200SS | -1.88d | 0d |  |
| 202 | 17.7 | Puerta acceso principal fibra de vidrio para exterior |  | 1d | 2024-09-24 | 2024-09-24 | 201SS | -1.88d | 0d |  |
| 203 | 17.8 | Puerta acceso para exteriores metálica modelo Lisa color chocolat |  | 1d | 2024-09-24 | 2024-09-24 | 202SS | -1.88d | 0d |  |
| 204 | 17.9 | Puerta para interiores de madera modelo HDF Arena, medida de 90 x 206 cm |  | 1d | 2024-09-24 | 2024-09-24 | 203SS | -1.88d | 0d |  |
| 205 | 17.10 | Puerta para interiores de madera modelo HDF Arena, medida de 80 x 206 cm |  | 1d | 2024-09-24 | 2024-09-24 | 204SS | -1.88d | 0d |  |
| 206 | 17.11 | Barandal tubular para escalera y balcón de 90 cm de altura |  | 1d | 2024-09-24 | 2024-09-24 | 205SS | -1.88d | 0d |  |
| 207 | 17.12 | Fin de CANCELRIA Y CARPINTERIA | milestone | 0d | 2024-09-24 | 2024-09-24 | 206 | -1.88d | 0d |  |

| ID | WBS | Task | Type | Duration | Start | Finish | Predecessors | Total slack | Free slack |
| --- | --- | --- | --- | --- | --- | --- | --- | --- | --- |
| 208 | 18 | **ACABADOS ELECTRICOS Y TELECOMUNICACIONES** |  | 3d? | 2024-09-21 | 2024-09-24 | 181 |  |  |
| 209 | 18.1 | Poliducto PVC 1¼" (32 mm) color naranja |  | 3d | 2024-09-21 | 2024-09-25 | 181 | 2.69d | 0d |
| 210 | 18.2 | Poliducto PVC 1¼" (32 mm) color naranja en pasillo de servicio hacia centro de carga |  | 3d | 2024-09-21 | 2024-09-25 | 209SS | 2.69d | 0d |
| 211 | 18.3 | Cable de cobre Calibre 6 aislado con THW-LS 75ø, marca Viakon. |  | 3d | 2024-09-21 | 2024-09-25 | 210SS | 2.69d | 0d |
| 212 | 18.4 | Cable de cobre Calibre 8 aislado con THW-LS 75ø, marca Viakon. |  | 3d | 2024-09-21 | 2024-09-25 | 211SS | 2.69d | 0d |
| 213 | 18.5 | Varilla Copperweld 5/8" x 1.5 m |  | 3d | 2024-09-21 | 2024-09-25 | 212SS | 2.69d | 0d |
| 214 | 18.6 | Interruptor termomagnetico 1x20 A QO120 clase 730, marca Square D. |  | 3d | 2024-09-21 | 2024-09-25 | 213SS | 2.69d | 0d |
| 215 | 18.7 | Contacto doble polarizado en planta baja, cable THW cal.12 (f 1-12 + n 1-12 + t 1-12) |  | 3d | 2024-09-21 | 2024-09-25 | 214SS | 2.69d | 0d |
| 216 | 18.8 | Contacto en planta baja ICFT doble polarizado puesta a tierra; cable THW cal.12 (f 1-12 + n 1-12 + t 1-12) |  | 3d | 2024-09-21 | 2024-09-25 | 215SS | 2.69d | 0d |
| 217 | 18.9 | Contacto doble polarizado planta baja aterrizado para exteriores; cable THW cal.12 (f 1-12 + n 1-12 + t 1-12 |  | 3d | 2024-09-21 | 2024-09-25 | 216SS | 2.69d | 0d |
| 218 | 18.10 | Luminaria salida en techos planta baja, cable THW marca Viakon |  | 3d | 2024-09-21 | 2024-09-25 | 217SS | 2.69d | 0d |
| 219 | 18.11 | Luminaria salida por muro en planta baja; cable THW marca Viakon |  | 3d | 2024-09-21 | 2024-09-25 | 218SS | 2.69d | 0d |
| 220 | 18.12 | Apagador doble en planta baja mca Leviton; cable THW marca Viakon |  | 3d | 2024-09-21 | 2024-09-25 | 219SS | 2.69d | 0d |
| 221 | 18.13 | Apagador 3 vias planta baja mca Leviton; cable THW marca Viakon |  | 3d | 2024-09-21 | 2024-09-25 | 220SS | 2.69d | 0d |
| 222 | 18.14 | Preparación de internet planta baja |  | 3d | 2024-09-21 | 2024-09-25 | 221SS | 2.69d | 0d |
| 223 | 18.15 | Preparación de TV planta baja |  | 3d | 2024-09-21 | 2024-09-25 | 222SS | 2.69d | 0d |
| 224 | 18.16 | Preparación de teléfono planta baja |  | 3d | 2024-09-21 | 2024-09-25 | 223SS | 2.69d | 0d |
| 225 | 18.17 | Luminaria salida en techos planta alta, cable THW marca Viakon |  | 3d | 2024-09-21 | 2024-09-25 | 224SS | 2.69d | 0d |
| 226 | 18.18 | Luminaria planta alta cable THW marca Viakon |  | 3d | 2024-09-21 | 2024-09-25 | 225SS | 2.69d | 0d |
| 227 | 18.19 | Apagador sencillo planta alta mca Leviton; cable THW marca Viakon |  | 3d | 2024-09-21 | 2024-09-25 | 226SS | 2.69d | 0d |
| 228 | 18.20 | Apagador doble planta alta mca Leviton, cable THW marca Viakon |  | 3d | 2024-09-21 | 2024-09-25 | 227SS | 2.69d | 0d |
| 229 | 18.21 | Apagador 3 vias planta alta, cable THW marca Viakon |  | 3d | 2024-09-21 | 2024-09-25 | 228SS | 2.69d | 0d |
| 230 | 18.22 | Preparación de internet planta alta |  | 3d | 2024-09-21 | 2024-09-25 | 229SS | 2.69d | 0d |
| 231 | 18.23 | Preparación de TV planta alta |  | 3d | 2024-09-21 | 2024-09-25 | 230SS | 2.69d | 0d |
| 232 | 18.24 | Preparación de teléfono planta alta |  | 3d | 2024-09-21 | 2024-09-25 | 231SS | 2.69d | 0d |
| 233 | 18.25 | Tapa ciega para salidas de internet, teléfono y TV; planta alta |  | 3d | 2024-09-21 | 2024-09-25 | 232SS | 2.69d | 0d |
| 234 | 18.26 | Fin de ACABADOS ELECTRICOS Y COMUNICACIONES | milestone | 0d | 2024-09-25 | 2024-09-25 | 233 | 2.69d |  |

| ID | WBS | Task | Type | Duration | Start | Finish | Predecessors | Total slack | Free slack |
| --- | --- | --- | --- | --- | --- | --- | --- | --- | --- |
| 235 | 19 | **MUEBLES SANITARIOS Y ACCESORIOS** |  | 4d | 2024-09-24 | 2024-09-30 | 207 |  |  |
| 236 | 19.1 | Colocación de taza modelo Austral alargada compacta color blanco y tanque modelo Austral marca Helvex |  | 3d | 2024-09-25 | 2024-09-27 | 207 | 5.12d | 0d |
| 237 | 19.2 | Colocación de fuente y pedestal modelo Vienna 4" (trampa y contra de latón y llave mezcladora para lavabo tipo monomando 4420 |  | 3d | 2024-09-25 | 2024-09-27 | 236SS | 5.12d | 0d |
| 238 | 19.3 | Accesorios de empotrar marca Helvex, kit de 3 accesorios (jabonera lavabo 108 Cromo, toallero barra 105 Cromo y porta papel anti robo115 Cromo) |  | 3d | 2024-09-25 | 2024-09-27 | 237SS | 5.12d | 0d |
| 239 | 19.4 | Regadera optima con brazo y chapetón modelo H200 Cromo marca Helvex |  | 3d | 2024-09-25 | 2024-09-27 | 238SS | 5.12d | 0d |
| 240 | 19.5 | Lavadero prefabricado con pileta |  | 3d | 2024-09-25 | 2024-09-27 | 239SS | 5.12d | 0d |
| 241 | 19.6 | Tinaco con PELBD (Polietileno lineal de baja densidad) |  | 1d | 2024-09-28 | 2024-09-30 | 240 | 5.12d | 0d |
| 242 | 19.7 | Fin de MUEBLES SANITARIOS Y TINACO | milestone | 0d | 2024-09-30 | 2024-09-30 | 241 | 5.12d |  |
| 243 | 20 | **OBRA EXTERIOR** |  | 11d | 2024-09-21 | 2024-10-07 | 207, 95 |  |  |
| 244 | 20.1 | Banqueta exterior en acceso principal concreto f'c= 150 kg/cm² |  | 4d | 2024-09-21 | 2024-09-26 | 94 | 0.69d | 0d |
| 245 | 20.2 | Huella para cochera acabado semi pulido floteado |  | 4d | 2024-09-21 | 2024-09-26 | 244SS | 0.69d | 0d |
| 246 | 20.3 | Pergolado en fachada modelo TUNERA |  | 4d | 2024-09-21 | 2024-09-26 | 245SS | 0.69d | 0d |
| 247 | 20.4 | Limpieza final de la obra para entregar |  | 5d | 2024-09-26 | 2024-10-03 | 246 | 0.69d | 0d |
| 248 | 20.5 | Retiro de escombros producto de la obra y desperdicios de materiales |  | 1d | 2024-10-03 | 2024-10-04 | 247 | 0.69d | 0d |
| 249 | 20.6 | Acarreo sobre camión de volteo de 7 m3 de material tipo A |  | 1d | 2024-10-04 | 2024-10-07 | 248 | 0.69d | 0d |
| 250 | 20.7 | Find OBRA EXTERIOR | milestone | 0d | 2024-10-07 | 2024-10-07 | 249 | 0.69d |  |
